# Agile Project Management

How a schedule from MS Project changed from version to version. A marks actual dates.

## Version 1 (saved 2014-06-14)

Note of the change: 添加系统实施项目管理文档。

| ID | WBS | Task | Duration | Start | Finish | Predecessors | Total float | Constraint |
| --- | --- | --- | --- | --- | --- | --- | --- | --- |
| 1 |  | 测试准备 | 2w | 2014-06-16 | 2014-06-27 |  |  |  |
| 2 |  | 培训、测试 | 2w | 2014-06-30 | 2014-07-11 |  |  |  |
| 3 |  | 试运行 | 1d? | 2014-06-16 | 2014-06-16 |  | 21d |  |
| 4 |  | 编写测试用例 | 9d | 2014-06-17 | 2014-06-27 |  | 12d | finish no earlier than 2014-06-27 |
| 5 |  | 编写操作手册 | 9d? | 2014-06-17 | 2014-06-27 |  | 12d | finish no earlier than 2014-06-27 |
| 6 | 6 | **系统完善** | 22d? | 2014-06-16 | 2014-07-15 |  | 0d |  |
| 7 | 6.1 | **框架** | 5d | 2014-06-16 | 2014-06-20 |  |  |  |
| 8 |  | 单点登录 | 3d | 2014-06-16 | 2014-06-18 |  | 2d |  |
| 9 | 6.2 | **基础管理模块** | 2d | 2014-06-26 | 2014-06-27 |  | 12d |  |
| 10 |  | 基础数据维护页面 | 2d | 2014-06-26 | 2014-06-27 |  | 12d |  |
| 11 | 6.3 | **运力规划模块** | 16d? | 2014-06-23 | 2014-07-14 |  | 1d |  |
| 12 |  | 后台计算 | 1d? | 2014-06-23 | 2014-06-23 |  | 16d |  |
| 13 |  | 查询单机档案 | 6d? | 2014-07-07 | 2014-07-14 | 50 | 1d | start no earlier than 2014-07-07 |
| 14 | 6.4 | **采购合同模块** | 2d? | 2014-06-23 | 2014-06-24 |  | 14d |  |
| 15 |  | 匹配计划飞机 | 2d? | 2014-06-23 | 2014-06-24 | 17 | 14d |  |
| 16 | 6.5 | **应付款模块** | 5d? | 2014-06-19 | 2014-06-25 |  | 14d |  |
| 17 |  | 付款计划数据视图调整 | 2d? | 2014-06-19 | 2014-06-20 | 8 | 14d |  |
| 18 |  | 分析付款计划执行 | 1d? | 2014-06-25 | 2014-06-25 | 15 | 14d |  |
| 19 | 6.6 | **发动机管理模块** | 22d? | 2014-06-16 | 2014-07-15 |  | 0d |  |
| 20 |  | 后台计算调试 | 1d? | 2014-06-24 | 2014-06-24 |  | 15d |  |
| 21 |  | APU滑油监控页面 | 1d? | 2014-06-30 | 2014-06-30 |  | 11d |  |
| 22 |  | 维护在位信息页面 | 2d? | 2014-06-16 | 2014-06-17 |  | 11d |  |
| 23 |  | 查询控制方案 | 1d? | 2014-06-18 | 2014-06-18 |  | 10d |  |
| 24 |  | 查询到寿日期 | 1d? | 2014-06-19 | 2014-06-19 |  | 9d |  |
| 25 |  | 租赁月度报表数据查询 | 2d? | 2014-07-14 | 2014-07-15 | 30 | 0d | start no earlier than 2014-06-30 |
| 26 | 6.7 | **适航管理模块** | 1d? | 2014-06-25 | 2014-06-25 |  | 14d |  |
| 27 |  | AD/SB数据导入 | 1d? | 2014-06-25 | 2014-06-25 |  | 14d |  |
| 28 | 6.8 | **文档库模块** | 1d? | 2014-06-26 | 2014-06-26 |  | 13d |  |
| 29 |  | 建索引的后台服务 | 1d? | 2014-06-26 | 2014-06-26 |  | 13d |  |
| 30 | 7 | **系统集成** | 10d? | 2014-06-20 | 2014-07-03 | 22, 23, 24 | 0d |  |
| 31 |  | 同步供应商 | 1d? | 2014-06-20 | 2014-06-20 |  | 9d |  |
| 32 |  | 同步发动机件号 | 1d? | 2014-06-27 | 2014-06-27 |  | 4d |  |
| 33 |  | 同步发动机序号 | 1d? | 2014-07-03 | 2014-07-03 |  | 0d |  |
| 34 | 8 | **Bug修改** | 2d? | 2014-06-30 | 2014-07-01 | 2SS | 10d |  |
| 35 | 8.1 | **基础管理模块** | 1d? | 2014-06-30 | 2014-06-30 |  | 11d |  |
| 36 |  | 维护经营证照 | 1d? | 2014-06-30 | 2014-06-30 |  | 11d |  |
| 37 | 8.2 | **飞机构型模块** | 1d? | 2014-07-01 | 2014-07-01 |  | 10d |  |
| 38 |  | 维护飞机证照 | 1d? | 2014-07-01 | 2014-07-01 |  | 10d |  |
| 39 |  | 运力规划模块 | 1d? | 2014-06-30 | 2014-06-30 |  | 11d |  |
| 40 |  | 采购合同模块 | 1d? | 2014-06-30 | 2014-06-30 |  | 11d |  |
| 41 |  | 应付款模块 | 1d? | 2014-06-30 | 2014-06-30 |  | 11d |  |
| 42 |  | 附件管理模块 | 1d? | 2014-06-30 | 2014-06-30 |  | 11d |  |
| 43 |  | 发动机管理模块 | 1d? | 2014-06-30 | 2014-06-30 |  | 11d |  |
| 44 |  | 适航管理模块 | 1d? | 2014-06-30 | 2014-06-30 |  | 11d |  |
| 45 |  | 文档库模块 | 1d? | 2014-06-30 | 2014-06-30 |  | 11d |  |
| 46 | 9 | **基础数据维护** | 3d? | 2014-06-30 | 2014-07-02 | 2SS | 9d |  |
| 47 |  | 权限管理 | 1d? | 2014-07-02 | 2014-07-02 |  | 9d |  |
| 48 |  | 运力规划数据迁移 | 3d | 2014-06-30 | 2014-07-02 |  | 9d |  |
| 49 |  | 历史拆装记录导入 | 2d? | 2014-06-30 | 2014-07-01 |  | 10d |  |
| 50 | 10 | **用户培训** | 4d? | 2014-06-30 | 2014-07-03 | 2SS | 1d |  |
| 51 |  | 规划 | 0.5d? | 2014-06-30 | 2014-06-30 |  | 4.5d | start no earlier than 2014-06-30 |
| 52 |  | 财务 | 0.5d? | 2014-07-01 | 2014-07-01 |  | 3d | finish no earlier than 2014-07-01 |
| 53 |  | 发管中心 | 0.5d? | 2014-07-02 | 2014-07-02 |  | 2d | finish no earlier than 2014-07-02 |
| 54 |  | 机务其他 | 0.5d | 2014-07-03 | 2014-07-03 |  | 1d | finish no earlier than 2014-07-03 |
| 55 | 11 | **功能测试** | 6d? | 2014-07-04 | 2014-07-11 | 50 | 1d |  |
| 56 | 11.1 | **开发方** | 6d? | 2014-07-04 | 2014-07-11 |  | 1d |  |
| 57 |  | 基础管理模块 | 0.25d? | 2014-07-04 | 2014-07-04 |  | 1d |  |
| 58 |  | 飞机构型模块 | 0.25d? | 2014-07-04 | 2014-07-04 | 57 | 1d |  |
| 59 |  | 运力规划模块 | 1d? | 2014-07-07 | 2014-07-07 | 65 | 1d |  |
| 60 |  | 采购合同模块 | 1d? | 2014-07-08 | 2014-07-08 | 59 | 1d |  |
| 61 |  | 应付款模块 | 1d? | 2014-07-09 | 2014-07-09 | 60 | 1d |  |
| 62 |  | 附件管理模块 | 0.5d? | 2014-07-11 | 2014-07-11 | 63 | 1d |  |
| 63 |  | 发动机管理模块 | 1d? | 2014-07-10 | 2014-07-10 | 61 | 1d |  |
| 64 |  | 适航管理模块 | 0.5d? | 2014-07-11 | 2014-07-11 | 62 | 1d |  |
| 65 |  | 文档库模块 | 0.5d? | 2014-07-04 | 2014-07-04 | 58 | 1d |  |
| 66 | 11.2 | **川航** | 6d? | 2014-07-04 | 2014-07-11 |  | 1d |  |
| 67 |  | 基础管理模块 | 0.25d? | 2014-07-04 | 2014-07-04 | 57SS | 6.75d |  |
| 68 |  | 飞机构型模块 | 0.25d? | 2014-07-04 | 2014-07-04 | 58SS | 6.5d |  |
| 69 |  | 运力规划模块 | 1d? | 2014-07-07 | 2014-07-07 | 59SS | 5d |  |
| 70 |  | 采购合同模块 | 1d? | 2014-07-08 | 2014-07-08 | 60SS | 4d |  |

| ID | WBS | Task | Duration | Start | Finish | Predecessors | Total float |
| --- | --- | --- | --- | --- | --- | --- | --- |
| 71 |  | 应付款模块 | 1d? | 2014-07-09 | 2014-07-09 | 61SS | 3d |
| 72 |  | 附件管理模块 | 0.5d? | 2014-07-11 | 2014-07-11 | 62SS | 1.5d |
| 73 |  | 发动机管理模块 | 1d? | 2014-07-10 | 2014-07-10 | 63SS | 2d |
| 74 |  | 适航管理模块 | 0.5d? | 2014-07-11 | 2014-07-11 | 64SS | 1d |
| 75 |  | 文档库模块 | 0.5d? | 2014-07-04 | 2014-07-04 | 65SS | 6d |
| 76 | 12 | **试运行数据准备** | 1d? | 2014-07-14 | 2014-07-14 | 55 | 1d |
| 77 |  | 权限配置 | 1d? | 2014-07-14 | 2014-07-14 |  | 1d |
| 78 |  | 运力规划数据迁移 | 1d? | 2014-07-14 | 2014-07-14 |  | 1d |
| 79 |  | 历史拆装记录导入 | 1d? | 2014-07-14 | 2014-07-14 |  | 1d |
| 80 |  | 基础配置 | 1d? | 2014-07-14 | 2014-07-14 |  | 1d |

## Version 2 (saved 2014-06-16)

Note of the change: Merge branch 'master' of https://github.com/UniCloud/FRP

Last finish 2014-07-15 → 2014-07-31 (+16d).

Added:

| ID | Task | Duration | Start | Finish | Predecessors | Constraint |
| --- | --- | --- | --- | --- | --- | --- |
| 76 | 测试Bug修改 | 14d? | 2014-07-14 | 2014-07-31 | 43 | start no earlier than 2014-07-14 |

Changed:

| ID | Task | Start | Finish | Duration | Total float |
| --- | --- | --- | --- | --- | --- |
| 35 | 权限管理 | 2014-07-02 → 2014-06-30 (-2d) | 2014-07-02 → 2014-06-30 (-2d) |  | 9d → 23d |
| 64 | **Bug修改** |  | 2014-07-01 → 2014-07-31 (+30d) | 2d? → 24d? | 10d → 0d |
| 65 | **基础管理模块** | 2014-06-30 → 2014-07-01 (+1d) | 2014-06-30 → 2014-07-01 (+1d) |  | 11d → 22d |
| 66 | 维护经营证照 | 2014-06-30 → 2014-07-01 (+1d) | 2014-06-30 → 2014-07-01 (+1d) |  | 11d → 22d |
| 67 | **飞机构型模块** | 2014-07-01 → 2014-07-02 (+1d) | 2014-07-01 → 2014-07-02 (+1d) |  | 10d → 21d |
| 68 | 维护飞机证照 | 2014-07-01 → 2014-07-02 (+1d) | 2014-07-01 → 2014-07-02 (+1d) |  | 10d → 21d |

## Version 3 (saved 2014-06-17)

Note of the change: Merge branch 'master' of https://github.com/UniCloud/FRP

Last finish 2014-07-31 → 2014-08-07 (+7d).

Added:

| ID | Task | Duration | Start | Finish | Predecessors | Resources |
| --- | --- | --- | --- | --- | --- | --- |
| 82 | **历史数据录入** | 13d | 2014-07-21 | 2014-08-07 | 78, 81 |  |
| 83 | 采购合同 | 5d | 2014-07-21 | 2014-07-28 |  | 张力 |
| 84 | 维修合同 | 5d | 2014-07-21 | 2014-07-28 |  | 资产用户 |
| 85 | 采购发票 | 3d | 2014-07-28 | 2014-07-31 | 83 | 资金用户 |
| 86 | 维修发票 | 5d | 2014-07-28 | 2014-08-04 | 84 | 资产用户 |
| 87 | 采购付款计划 | 3d | 2014-07-31 | 2014-08-05 | 85 | 资金用户 |
| 88 | 维修付款计划 | 3d | 2014-08-04 | 2014-08-07 | 84 | 资产用户 |

Changed:

| ID | Task | Start | Finish | Duration | Total float |
| --- | --- | --- | --- | --- | --- |
| 6 | **系统完善** |  | 2014-07-15 → 2014-07-22 (+7d) | 22d? → 26.5d? |  |
| 19 | **发动机管理模块** |  | 2014-07-15 → 2014-07-22 (+7d) | 22d? → 26.5d? |  |
| 21 | APU滑油监控页面 | 2014-06-30 → 2014-07-04 (+4d) | 2014-06-30 → 2014-07-04 (+4d) |  | 23d → 23.5d |
| 25 | 租赁月度报表数据查询 | 2014-07-14 → 2014-07-18 (+4d) | 2014-07-15 → 2014-07-22 (+7d) |  |  |
| 39 | 规划 |  |  | 0.5d? → 1d? | 3.5d → 3d |
| 40 | 财务 |  |  | 0.5d? → 1d? |  |
| 41 | 发管中心 |  |  | 0.5d? → 1d? |  |
| 42 | 机务其他 |  |  | 0.5d → 1d |  |
| 43 | **功能测试** |  | 2014-07-11 → 2014-07-18 (+7d) | 6d? → 10.5d? |  |
| 44 | **开发方** |  | 2014-07-11 → 2014-07-18 (+7d) | 6d? → 10.5d? |  |
| 45 | 基础管理模块 |  |  | 0.25d? → 0.5d? |  |
| 46 | 飞机构型模块 |  |  | 0.25d? → 0.5d? |  |
| 47 | 运力规划模块 |  | 2014-07-07 → 2014-07-09 (+2d) | 1d? → 2d? |  |
| 48 | 采购合同模块 | 2014-07-08 → 2014-07-09 (+1d) | 2014-07-08 → 2014-07-11 (+3d) | 1d? → 2d? |  |
| 49 | 应付款模块 | 2014-07-09 → 2014-07-11 (+2d) | 2014-07-09 → 2014-07-15 (+6d) | 1d? → 2d? |  |
| 50 | 附件管理模块 | 2014-07-11 → 2014-07-17 (+6d) | 2014-07-11 → 2014-07-17 (+6d) |  |  |
| 51 | 发动机管理模块 | 2014-07-10 → 2014-07-15 (+5d) | 2014-07-10 → 2014-07-17 (+7d) | 1d? → 2d? |  |
| 52 | 适航管理模块 | 2014-07-11 → 2014-07-18 (+7d) | 2014-07-11 → 2014-07-18 (+7d) |  |  |
| 53 | 文档库模块 | 2014-07-04 → 2014-07-07 (+3d) | 2014-07-04 → 2014-07-07 (+3d) |  |  |
| 54 | **川航** |  | 2014-07-11 → 2014-07-18 (+7d) | 6d? → 10.5d? |  |
| 55 | 基础管理模块 |  |  | 0.25d? → 0.5d? | 5.75d → 10d |
| 56 | 飞机构型模块 |  |  | 0.25d? → 0.5d? | 5.5d → 9.5d |
| 57 | 运力规划模块 |  | 2014-07-07 → 2014-07-09 (+2d) | 1d? → 2d | 4d → 7d |
| 58 | 采购合同模块 | 2014-07-08 → 2014-07-09 (+1d) | 2014-07-08 → 2014-07-11 (+3d) | 1d? → 2d | 3d → 5d |
| 59 | 应付款模块 | 2014-07-09 → 2014-07-11 (+2d) | 2014-07-09 → 2014-07-15 (+6d) | 1d? → 2d | 2d → 3d |
| 60 | 附件管理模块 | 2014-07-11 → 2014-07-17 (+6d) | 2014-07-11 → 2014-07-17 (+6d) |  |  |
| 61 | 发动机管理模块 | 2014-07-10 → 2014-07-15 (+5d) | 2014-07-10 → 2014-07-17 (+7d) | 1d? → 2d |  |
| 62 | 适航管理模块 | 2014-07-11 → 2014-07-18 (+7d) | 2014-07-11 → 2014-07-18 (+7d) |  |  |
| 63 | 文档库模块 | 2014-07-04 → 2014-07-07 (+3d) | 2014-07-04 → 2014-07-07 (+3d) |  | 5d → 9d |
| 64 | **Bug修改** |  | 2014-07-31 → 2014-08-07 (+7d) | 24d? → 28.5d? |  |
| 76 | 测试Bug修改 | 2014-07-14 → 2014-07-18 (+4d) | 2014-07-31 → 2014-08-07 (+7d) |  |  |
| 77 | **试运行数据准备** | 2014-07-14 → 2014-07-18 (+4d) | 2014-07-14 → 2014-08-07 (+24d) | 1d? → 14d? | 13d → 0d |
| 78 | 权限配置 | 2014-07-14 → 2014-07-18 (+4d) | 2014-07-14 → 2014-07-21 (+7d) |  | 13d → 0d |
| 79 | 运力规划数据迁移 | 2014-07-14 → 2014-07-18 (+4d) | 2014-07-14 → 2014-07-21 (+7d) |  |  |
| 80 | 历史拆装记录导入 | 2014-07-14 → 2014-07-18 (+4d) | 2014-07-14 → 2014-07-21 (+7d) |  |  |
| 81 | 基础配置 | 2014-07-14 → 2014-07-18 (+4d) | 2014-07-14 → 2014-07-21 (+7d) |  | 13d → 0d |

## Version 4 (saved 2014-06-17)

Note of the change: 修订项目计划。

Last finish 2014-08-07 → 2014-08-15 (+8d).

Changed:

| ID | Task | Start | Finish | Duration | Complete | Total float | Other |
| --- | --- | --- | --- | --- | --- | --- | --- |
| 1 | 测试准备 |  |  |  |  | none → 28.5d | baseline start none → 2014-06-16; baseline finish none → 2014-06-27 |
| 2 | 培训、测试 |  | 2014-07-11 → 2014-07-18 (+7d) | 2w → 3w |  |  | baseline start none → 2014-06-30; baseline finish none → 2014-07-11 |
| 3 | 试运行 | 2014-06-16 → 2014-07-21 (+35d) | 2014-06-16 → 2014-08-15 (+60d) | 1d? → 20d? |  | 37.5d → 0d | constraint none → finish no earlier than 2014-08-15; baseline start none → 2014-06-16; baseline finish none → 2014-06-16 |
| 4 | 编写测试用例 |  |  |  |  |  | resources 资源A → 张春林; baseline start none → 2014-06-17; baseline finish none → 2014-06-27 |
| 5 | 编写操作手册 |  |  |  |  |  | resources 资源B → 王传虎; baseline start none → 2014-06-17; baseline finish none → 2014-06-27 |
| 6 | **系统完善** |  |  |  |  |  | baseline start none → 2014-06-16; baseline finish none → 2014-07-22 |
| 7 | **框架** |  |  |  |  |  | baseline start none → 2014-06-16; baseline finish none → 2014-06-20 |
| 8 | 单点登录 | 2014-06-16 A |  |  | 0% → 30% | 2d → 0d | baseline start none → 2014-06-16; baseline finish none → 2014-06-18 |
| 9 | **基础管理模块** |  |  |  |  |  | baseline start none → 2014-06-26; baseline finish none → 2014-06-27 |
| 10 | 基础数据维护页面 |  |  |  |  |  | baseline start none → 2014-06-26; baseline finish none → 2014-06-27 |
| 11 | **运力规划模块** |  |  |  |  |  | baseline start none → 2014-06-23; baseline finish none → 2014-07-14 |
| 12 | 后台计算 |  |  |  |  |  | baseline start none → 2014-06-23; baseline finish none → 2014-06-23 |
| 13 | 查询单机档案 |  |  |  |  |  | baseline start none → 2014-07-07; baseline finish none → 2014-07-14 |
| 14 | **采购合同模块** |  |  |  |  |  | baseline start none → 2014-06-23; baseline finish none → 2014-06-24 |
| 15 | 匹配计划飞机 |  |  |  |  |  | baseline start none → 2014-06-23; baseline finish none → 2014-06-24 |
| 16 | **应付款模块** |  |  |  |  |  | baseline start none → 2014-06-19; baseline finish none → 2014-06-25 |
| 17 | 付款计划数据视图调整 |  |  |  |  |  | baseline start none → 2014-06-19; baseline finish none → 2014-06-20 |
| 18 | 分析付款计划执行 |  |  |  |  |  | baseline start none → 2014-06-25; baseline finish none → 2014-06-25 |
| 19 | **发动机管理模块** |  |  |  |  |  | baseline start none → 2014-06-16; baseline finish none → 2014-07-22 |
| 20 | 后台计算调试 |  |  |  |  |  | baseline start none → 2014-06-24; baseline finish none → 2014-06-24 |
| 21 | APU滑油监控页面 |  |  |  |  |  | baseline start none → 2014-07-04; baseline finish none → 2014-07-04 |
| 22 | 维护在位信息页面 |  |  |  |  |  | baseline start none → 2014-06-16; baseline finish none → 2014-06-17 |
| 23 | 查询控制方案 |  |  |  |  |  | baseline start none → 2014-06-18; baseline finish none → 2014-06-18 |
| 24 | 查询到寿日期 |  |  |  |  |  | baseline start none → 2014-06-19; baseline finish none → 2014-06-19 |
| 25 | 租赁月度报表数据查询 |  |  |  |  |  | baseline start none → 2014-07-18; baseline finish none → 2014-07-22 |
| 26 | **适航管理模块** |  |  |  |  |  | baseline start none → 2014-06-25; baseline finish none → 2014-06-25 |
| 27 | AD/SB数据导入 |  |  |  |  |  | baseline start none → 2014-06-25; baseline finish none → 2014-06-25 |
| 28 | **文档库模块** |  |  |  |  |  | baseline start none → 2014-06-26; baseline finish none → 2014-06-26 |
| 29 | 建索引的后台服务 |  |  |  |  |  | baseline start none → 2014-06-26; baseline finish none → 2014-06-26 |
| 30 | **系统集成** |  |  |  |  |  | baseline start none → 2014-06-20; baseline finish none → 2014-07-03 |
| 31 | 同步供应商 |  |  |  |  |  | baseline start none → 2014-06-20; baseline finish none → 2014-06-20 |
| 32 | 同步发动机件号 |  |  |  |  |  | baseline start none → 2014-06-27; baseline finish none → 2014-06-27 |
| 33 | 同步发动机序号 |  |  |  |  |  | baseline start none → 2014-07-03; baseline finish none → 2014-07-03 |
| 34 | **基础数据维护** |  |  |  |  |  | baseline start none → 2014-06-30; baseline finish none → 2014-07-02 |
| 35 | 权限管理 |  |  |  |  |  | resources 资源A [25%] → 张春林 [25%]; baseline start none → 2014-06-30; baseline finish none → 2014-06-30 |
| 36 | 运力规划数据迁移 |  |  |  |  |  | baseline start none → 2014-06-30; baseline finish none → 2014-07-02 |
| 37 | 历史拆装记录导入 |  |  |  |  |  | resources 资源B → 王传虎; baseline start none → 2014-06-30; baseline finish none → 2014-07-01 |
| 38 | **用户培训** |  |  |  |  |  | baseline start none → 2014-06-30; baseline finish none → 2014-07-03 |
| 39 | 规划 |  |  |  |  |  | baseline start none → 2014-06-30; baseline finish none → 2014-06-30 |
| 40 | 财务 |  |  |  |  |  | baseline start none → 2014-07-01; baseline finish none → 2014-07-01 |
| 41 | 发管中心 |  |  |  |  |  | baseline start none → 2014-07-02; baseline finish none → 2014-07-02 |
| 42 | 机务其他 |  |  |  |  |  | baseline start none → 2014-07-03; baseline finish none → 2014-07-03 |
| 43 | **功能测试** |  |  |  |  |  | baseline start none → 2014-07-04; baseline finish none → 2014-07-18 |
| 44 | **开发方** |  |  |  |  |  | baseline start none → 2014-07-04; baseline finish none → 2014-07-18 |
| 45 | 基础管理模块 |  |  |  |  |  | baseline start none → 2014-07-04; baseline finish none → 2014-07-04 |
| 46 | 飞机构型模块 |  |  |  |  |  | baseline start none → 2014-07-04; baseline finish none → 2014-07-04 |
| 47 | 运力规划模块 |  |  |  |  |  | baseline start none → 2014-07-07; baseline finish none → 2014-07-09 |
| 48 | 采购合同模块 |  |  |  |  |  | baseline start none → 2014-07-09; baseline finish none → 2014-07-11 |
| 49 | 应付款模块 |  |  |  |  |  | baseline start none → 2014-07-11; baseline finish none → 2014-07-15 |
| 50 | 附件管理模块 |  |  |  |  |  | baseline start none → 2014-07-17; baseline finish none → 2014-07-17 |
| 51 | 发动机管理模块 |  |  |  |  |  | baseline start none → 2014-07-15; baseline finish none → 2014-07-17 |
| 52 | 适航管理模块 |  |  |  |  |  | baseline start none → 2014-07-18; baseline finish none → 2014-07-18 |
| 53 | 文档库模块 |  |  |  |  |  | baseline start none → 2014-07-07; baseline finish none → 2014-07-07 |
| 54 | **川航** |  |  |  |  |  | baseline start none → 2014-07-04; baseline finish none → 2014-07-18 |
| 55 | 基础管理模块 |  |  |  |  |  | baseline start none → 2014-07-04; baseline finish none → 2014-07-04 |
| 56 | 飞机构型模块 |  |  |  |  |  | baseline start none → 2014-07-04; baseline finish none → 2014-07-04 |
| 57 | 运力规划模块 |  |  |  |  |  | baseline start none → 2014-07-07; baseline finish none → 2014-07-09 |
| 58 | 采购合同模块 |  |  |  |  |  | baseline start none → 2014-07-09; baseline finish none → 2014-07-11 |
| 59 | 应付款模块 |  |  |  |  |  | baseline start none → 2014-07-11; baseline finish none → 2014-07-15 |
| 60 | 附件管理模块 |  |  |  |  |  | baseline start none → 2014-07-17; baseline finish none → 2014-07-17 |
| 61 | 发动机管理模块 |  |  |  |  |  | baseline start none → 2014-07-15; baseline finish none → 2014-07-17 |
| 62 | 适航管理模块 |  |  |  |  |  | baseline start none → 2014-07-18; baseline finish none → 2014-07-18 |
| 63 | 文档库模块 |  |  |  |  |  | baseline start none → 2014-07-07; baseline finish none → 2014-07-07 |
| 64 | **Bug修改** |  |  |  |  |  | baseline start none → 2014-06-30; baseline finish none → 2014-08-07 |
| 65 | **基础管理模块** |  |  |  |  |  | baseline start none → 2014-07-01; baseline finish none → 2014-07-01 |
| 66 | 维护经营证照 |  |  |  |  |  | resources 资源A → 张春林; baseline start none → 2014-07-01; baseline finish none → 2014-07-01 |
| 67 | **飞机构型模块** |  |  |  |  |  | baseline start none → 2014-07-02; baseline finish none → 2014-07-02 |
| 68 | 维护飞机证照 |  |  |  |  |  | resources 资源A → 张春林; baseline start none → 2014-07-02; baseline finish none → 2014-07-02 |
| 69 | 运力规划模块 |  |  |  |  |  | baseline start none → 2014-06-30; baseline finish none → 2014-06-30 |
| 70 | 采购合同模块 |  |  |  |  |  | baseline start none → 2014-06-30; baseline finish none → 2014-06-30 |

| ID | Task | Other |
| --- | --- | --- |
| 71 | 应付款模块 | baseline start none → 2014-06-30; baseline finish none → 2014-06-30 |
| 72 | 附件管理模块 | baseline start none → 2014-06-30; baseline finish none → 2014-06-30 |
| 73 | 发动机管理模块 | baseline start none → 2014-06-30; baseline finish none → 2014-06-30 |
| 74 | 适航管理模块 | baseline start none → 2014-06-30; baseline finish none → 2014-06-30 |
| 75 | 文档库模块 | baseline start none → 2014-06-30; baseline finish none → 2014-06-30 |
| 76 | 测试Bug修改 | baseline start none → 2014-07-18; baseline finish none → 2014-08-07 |
| 77 | **试运行数据准备** | baseline start none → 2014-07-18; baseline finish none → 2014-08-07 |
| 78 | 权限配置 | baseline start none → 2014-07-18; baseline finish none → 2014-07-21 |
| 79 | 运力规划数据迁移 | baseline start none → 2014-07-18; baseline finish none → 2014-07-21 |
| 80 | 历史拆装记录导入 | baseline start none → 2014-07-18; baseline finish none → 2014-07-21 |
| 81 | 基础配置 | baseline start none → 2014-07-18; baseline finish none → 2014-07-21 |
| 82 | **历史数据录入** | baseline start none → 2014-07-21; baseline finish none → 2014-08-07 |
| 83 | 采购合同 | baseline start none → 2014-07-21; baseline finish none → 2014-07-28 |
| 84 | 维修合同 | baseline start none → 2014-07-21; baseline finish none → 2014-07-28 |
| 85 | 采购发票 | baseline start none → 2014-07-28; baseline finish none → 2014-07-31 |
| 86 | 维修发票 | baseline start none → 2014-07-28; baseline finish none → 2014-08-04 |
| 87 | 采购付款计划 | baseline start none → 2014-07-31; baseline finish none → 2014-08-05 |
| 88 | 维修付款计划 | baseline start none → 2014-08-04; baseline finish none → 2014-08-07 |

## Version 5 (saved 2014-06-20)

Note of the change: 更新项目进度。

Last finish stays 2014-08-15. Complete tasks 0 → 2.

Changed:

| ID | Task | Start | Finish | Complete | Total float |
| --- | --- | --- | --- | --- | --- |
| 6 | **系统完善** | 2014-06-16 A |  | 0% → 3% | 0d → 18.5d |
| 7 | **框架** | 2014-06-16 A |  | 0% → 30% |  |
| 8 | 单点登录 |  |  | 30% → 75% |  |
| 22 | 维护在位信息页面 | 2014-06-16 A |  | 0% → 75% | 23d → 0d |
| 23 | 查询控制方案 | 2014-06-18 A | 2014-06-18 A | 0% → 100% | 22d → none |
| 24 | 查询到寿日期 | 2014-06-19 A | 2014-06-19 A | 0% → 100% | 21d → none |

## Version 6 (saved 2014-06-26)

Note of the change: 添加程序集引用

Last finish stays 2014-08-15. Complete tasks 2 → 3.

Changed:

| ID | Task | Start | Finish | Complete | Total float |
| --- | --- | --- | --- | --- | --- |
| 6 | **系统完善** |  |  | 3% → 21% |  |
| 7 | **框架** |  |  | 30% → 75% |  |
| 15 | 匹配计划飞机 | 2014-06-23 A |  | 0% → 50% | 37d → 0d |
| 19 | **发动机管理模块** | 2014-06-16 A |  | 0% → 44% |  |
| 29 | 建索引的后台服务 | 2014-06-26 A | 2014-06-26 A | 0% → 100% | 36d → none |

## Version 7 (saved 2014-06-30)

Note of the change: Merge branch 'master' of https://github.com/UniCloud/FRP.git

Last finish stays 2014-08-15. Complete tasks 3 → 4.

Changed:

| ID | Task | Start | Finish | Complete | Total float |
| --- | --- | --- | --- | --- | --- |
| 6 | **系统完善** |  |  | 21% → 29% |  |
| 14 | **采购合同模块** | 2014-06-23 A |  | 0% → 50% |  |
| 15 | 匹配计划飞机 |  | 2014-06-24 A | 50% → 100% | 0d → none |
| 28 | **文档库模块** | 2014-06-26 A | 2014-06-26 A | 0% → 100% | 36d → none |

## Version 8 (saved 2014-07-09)

Note of the change: Merge branch 'master' of https://github.com/UniCloud/FRP

Last finish stays 2014-08-15. Complete tasks 4 → 11.

Changed:

| ID | Task | Start | Finish | Duration | Complete | Total float |
| --- | --- | --- | --- | --- | --- | --- |
| 4 | 编写测试用例 | 2014-06-17 A | 2014-06-27 A |  | 0% → 100% | 35d → none |
| 5 | 编写操作手册 | 2014-06-17 A | 2014-06-27 A |  | 0% → 100% | 35d → none |
| 6 | **系统完善** |  |  |  | 29% → 32% |  |
| 8 | 单点登录 |  | 2014-06-18 A |  | 75% → 100% | 1d → none |
| 9 | **基础管理模块** | 2014-06-26 → 2014-06-19 (-7d) | 2014-06-27 → 2014-06-20 (-7d) |  |  | 35d → 40d |
| 10 | 基础数据维护页面 | 2014-06-26 → 2014-06-19 (-7d) | 2014-06-27 → 2014-06-20 (-7d) |  |  | 35d → 40d |
| 14 | **采购合同模块** |  | 2014-06-24 A |  | 50% → 100% | 37d → none |
| 16 | **应付款模块** | 2014-06-19 → 2014-06-26 (+7d) | 2014-06-25 → 2014-07-04 (+9d) | 5d? → 7d? |  | 1d → 30d |
| 17 | 付款计划数据视图调整 | 2014-06-19 → 2014-06-26 A (+7d) | 2014-06-20 → 2014-06-27 (+7d) |  | 0% → 50% | 1d → 0d |
| 18 | 分析付款计划执行 | 2014-06-25 → 2014-07-04 (+9d) | 2014-06-25 → 2014-07-04 (+9d) |  |  | 37d → 30d |
| 20 | 后台计算调试 | 2014-06-24 A |  |  | 0% → 50% | 38d → 0d |
| 21 | APU滑油监控页面 | 2014-07-04 → 2014-06-25 A (-9d) | 2014-07-04 → 2014-06-25 (-9d) |  | 0% → 50% | 30d → 0d |
| 39 | 规划 | 2014-06-30 A | 2014-06-30 A |  | 0% → 100% | 9.5d → none |
| 40 | 财务 | 2014-07-01 A | 2014-07-01 A |  | 0% → 100% | 8.5d → none |
| 41 | 发管中心 | 2014-07-02 A | 2014-07-02 A |  | 0% → 100% | 7.5d → none |
| 42 | 机务其他 | 2014-07-03 A | 2014-07-03 A |  | 0% → 100% | 6.5d → none |
