# Agile Project Management

How a schedule from MS Project changed from version to version. A marks actual dates.

## Version 1 (saved 2013-12-11)

Note of the change: 添加项目管理文档

| ID | WBS | Task | Duration | Start | Finish | Predecessors | Complete | Total float | Constraint |
| --- | --- | --- | --- | --- | --- | --- | --- | --- | --- |
| 1 |  | 冲刺 1 | 6d? | 2013-12-11 | 2013-12-18 |  |  | 24d | finish no earlier than 2013-12-18 |
| 2 |  | 冲刺 2 | 7d? | 2013-12-19 | 2013-12-27 |  |  | 17d | finish no earlier than 2013-12-27 |
| 3 | 3 | **优化技术架构** | 11d? | 2013-11-01 A | 2013-11-15 A |  | 100% |  |  |
| 4 |  | 领域层优化 | 2d? | 2013-11-01 A | 2013-11-04 A |  | 100% |  | start no earlier than 2013-11-01 |
| 5 |  | 基础结构层优化 | 2d? | 2013-11-05 A | 2013-11-06 A |  | 100% |  |  |
| 6 |  | 应用层优化 | 2d? | 2013-11-07 A | 2013-11-08 A |  | 100% |  |  |
| 7 | 3.4 | **分布服务层优化** | 5d | 2013-11-01 A | 2013-11-07 A |  | 100% |  |  |
| 8 |  | 实现更新接口 | 5d | 2013-11-01 A | 2013-11-07 A |  | 100% |  | finish no earlier than 2013-11-07 |
| 9 | 3.5 | **表示层优化** | 6d? | 2013-11-08 A | 2013-11-15 A |  | 100% |  |  |
| 10 |  | 实现客户端服务 | 2d | 2013-11-11 A | 2013-11-12 A |  | 100% |  |  |
| 11 |  | 实现ViewModel基类 | 3d? | 2013-11-13 A | 2013-11-15 A |  | 100% |  | finish no earlier than 2013-11-15 |
| 12 |  | 优化客户端集合类 | 4d? | 2013-11-08 A | 2013-11-13 A |  | 100% |  | finish no earlier than 2013-11-13 |
| 13 |  | 重写工具类 | 2d? | 2013-11-14 A | 2013-11-15 A |  | 100% |  | start no earlier than 2013-11-14 |
| 14 | 4 | **采购管理模块** | 16d? | 2013-11-18 A | 2013-12-09 | 3 | 38% | 5d |  |
| 15 | 4.1 | **管理合作公司** | 8d? | 2013-11-18 A | 2013-11-27 A |  | 100% |  |  |
| 16 |  | 维护供应商类别 | 2d? | 2013-11-18 A | 2013-11-19 A |  | 100% |  |  |
| 17 |  | 维护供应商 | 2d? | 2013-11-20 A | 2013-11-21 A |  | 100% |  |  |
| 18 |  | 维护供应商可供物料 | 2d? | 2013-11-22 A | 2013-11-25 A |  | 100% |  |  |
| 19 |  | 维护BFE承运人 | 2d? | 2013-11-26 A | 2013-11-27 A |  | 100% |  |  |
| 20 | 4.2 | **管理采购合同** | 11d? | 2013-11-18 | 2013-12-02 |  |  | 7d |  |
| 21 |  | 管理飞机购买合同 | 3d? | 2013-11-18 | 2013-11-20 |  |  | 15d | start no earlier than 2013-11-18 |
| 22 |  | 管理飞机租赁合同 | 2d? | 2013-11-21 | 2013-11-22 |  |  | 13d |  |
| 23 |  | 管理发动机购买合同 | 2d? | 2013-11-25 | 2013-11-26 |  |  | 11d |  |
| 24 |  | 管理发动机租赁合同 | 2d? | 2013-11-27 | 2013-11-28 |  |  | 9d |  |
| 25 |  | 管理BFE合同 | 2d? | 2013-11-29 | 2013-12-02 |  |  | 7d |  |
| 26 | 4.3 | **管理维修合同** | 6d? | 2013-11-18 A | 2013-11-25 A |  | 100% |  |  |
| 27 |  | 管理发动机维修合同 | 2d? | 2013-11-18 A | 2013-11-19 A |  | 100% |  |  |
| 28 |  | 管理APU维修合同 | 2d? | 2013-11-20 A | 2013-11-21 A |  | 100% |  |  |
| 29 |  | 管理起落架维修合同 | 2d? | 2013-11-22 A | 2013-11-25 A |  | 100% |  |  |
| 30 | 4.4 | **管理接收** | 10d? | 2013-11-18 A | 2013-11-29 |  | 20% | 11d |  |
| 31 |  | 匹配计划飞机 | 2d? | 2013-11-18 A | 2013-11-19 A |  | 100% |  |  |
| 32 |  | 维护飞机交付通知 | 2d? | 2013-11-20 | 2013-11-21 |  |  | 17d |  |
| 33 |  | 管理飞机接收日程 | 2d? | 2013-11-22 | 2013-11-25 |  |  | 15d |  |
| 34 |  | 维护发动机交付通知 | 2d? | 2013-11-26 | 2013-11-27 |  |  | 13d |  |
| 35 |  | 管理发动机接收日程 | 2d? | 2013-11-28 | 2013-11-29 |  |  | 11d |  |
| 36 | 4.5 | **查询分析** | 5d? | 2013-12-03 | 2013-12-09 | 20, 26 |  | 5d |  |
| 37 |  | 查询合同 | 2d? | 2013-12-03 | 2013-12-04 |  |  | 8d |  |
| 38 |  | 分析飞机价格 | 3d? | 2013-12-03 | 2013-12-05 |  |  | 7d |  |
| 39 |  | 分析发动机价格 | 2d? | 2013-12-06 | 2013-12-09 |  |  | 5d |  |
| 40 | 5 | **应付款模块** | 9d | 2013-12-10 | 2013-12-20 | 14 |  |  |  |
| 41 |  | 领域模型设计 | 3d? | 2013-12-10 | 2013-12-12 |  |  | 6d |  |
| 42 | 5.2 | **管理付款计划** | 4d? | 2013-12-10 | 2013-12-13 |  |  | 3d |  |
| 43 |  | 管理飞机付款计划 | 2d? | 2013-12-10 | 2013-12-11 |  |  | 5d |  |
| 44 |  | 管理发动机付款计划 | 1d? | 2013-12-12 | 2013-12-12 |  |  | 4d |  |
| 45 |  | 管理一般付款计划 | 1d? | 2013-12-13 | 2013-12-13 |  |  | 3d |  |
| 46 | 5.3 | **管理发票** | 7d? | 2013-12-10 | 2013-12-18 |  |  | 0d |  |
| 47 |  | 维护采购发票 | 2d? | 2013-12-10 | 2013-12-11 |  |  | 5d |  |
| 48 |  | 维护预付款发票 | 1d? | 2013-12-12 | 2013-12-12 |  |  | 4d |  |
| 49 |  | 维护租赁发票 | 1d? | 2013-12-13 | 2013-12-13 |  |  | 3d |  |
| 50 |  | 维护贷项单 | 1d? | 2013-12-18 | 2013-12-18 |  |  | 0d |  |
| 51 |  | 维护发动机维修发票 | 2d? | 2013-12-10 | 2013-12-11 |  |  | 5d |  |
| 52 |  | 维护APU维修发票 | 1d? | 2013-12-12 | 2013-12-12 |  |  | 4d |  |
| 53 |  | 维护起落架维修发票 | 1d? | 2013-12-13 | 2013-12-13 |  |  | 3d |  |
| 54 |  | 维护机身维修发票 | 1d? | 2013-12-18 | 2013-12-18 |  |  | 0d |  |
| 55 |  | 维护付款通知 | 2d? | 2013-12-19 | 2013-12-20 |  |  | 0d |  |
| 56 | 5.5 | **管理保函** | 4d? | 2013-12-17 | 2013-12-20 |  |  | 0d |  |
| 57 |  | 维护租赁保证金 | 2d? | 2013-12-17 | 2013-12-18 |  |  | 2d |  |
| 58 |  | 维护大修保证金 | 2d? | 2013-12-19 | 2013-12-20 |  |  | 0d |  |
| 59 | 5.6 | **管理飞机价格** | 6d? | 2013-12-13 | 2013-12-20 |  |  | 0d |  |
| 60 |  | 设置飞机价格公式 | 2d? | 2013-12-13 | 2013-12-16 |  |  | 4d |  |
| 61 |  | 设置发动机价格公式 | 2d? | 2013-12-17 | 2013-12-18 |  |  | 2d |  |
| 62 |  | 计算飞机价格 | 2d? | 2013-12-19 | 2013-12-20 |  |  | 0d |  |
| 63 | 5.7 | **查询分析** | 5d? | 2013-12-16 | 2013-12-20 |  |  | 0d |  |
| 64 |  | 查询付款计划 | 1d? | 2013-12-16 | 2013-12-16 | 42 |  | 4d |  |
| 65 |  | 预测资金需求 | 2d? | 2013-12-16 | 2013-12-17 | 42 |  | 3d |  |
| 66 |  | 分析付款计划执行 | 2d? | 2013-12-16 | 2013-12-17 | 42 |  | 3d |  |
| 67 |  | 分析维修成本 | 2d? | 2013-12-19 | 2013-12-20 | 46 |  | 0d |  |
| 68 | 6 | **项目管理模块** | 6d? | 2013-12-23 | 2013-12-30 | 40 |  | 7d |  |
| 69 |  | 领域模型设计 | 3d? | 2013-12-23 | 2013-12-25 |  |  | 10d |  |
| 70 | 6.2 | **管理项目模板** | 6d? | 2013-12-23 | 2013-12-30 |  |  | 7d |  |

| ID | WBS | Task | Duration | Start | Finish | Predecessors | Total float |
| --- | --- | --- | --- | --- | --- | --- | --- |
| 71 |  | 维护任务模板 | 2d? | 2013-12-23 | 2013-12-24 |  | 11d |
| 72 |  | 维护子项模板 | 2d? | 2013-12-25 | 2013-12-26 |  | 9d |
| 73 |  | 维护项目模板 | 2d? | 2013-12-27 | 2013-12-30 |  | 7d |
| 74 | 6.3 | **编制项目计划** | 4d? | 2013-12-23 | 2013-12-26 |  | 9d |
| 75 |  | 维护项目计划 | 2d? | 2013-12-23 | 2013-12-24 |  | 11d |
| 76 |  | 发布项目计划 | 2d? | 2013-12-25 | 2013-12-26 |  | 9d |
| 77 | 6.4 | **执行项目计划** | 4d? | 2013-12-23 | 2013-12-26 |  | 9d |
| 78 |  | 分派任务 | 2d? | 2013-12-23 | 2013-12-24 |  | 11d |
| 79 |  | 查询项目执行 | 2d? | 2013-12-25 | 2013-12-26 |  | 9d |
| 80 | 7 | **运力规划模块** | 9d? | 2013-12-31 | 2014-01-10 | 68 | 1d |
| 81 |  | 领域模型设计 | 3d? | 2013-12-31 | 2014-01-02 |  | 7d |
| 82 | 7.2 | **编制运力规划** | 7d? | 2013-12-31 | 2014-01-08 |  | 3d |
| 83 |  | 民航五年规划 | 1d? | 2013-12-31 | 2013-12-31 |  | 9d |
| 84 |  | 管理五年规划 | 1d? | 2014-01-01 | 2014-01-01 |  | 8d |
| 85 |  | 准备编制 | 1d? | 2014-01-02 | 2014-01-02 |  | 7d |
| 86 |  | 编制规划 | 1d? | 2014-01-03 | 2014-01-03 |  | 6d |
| 87 |  | 发布规划 | 1d? | 2014-01-06 | 2014-01-06 |  | 5d |
| 88 |  | 报送规划 | 1d? | 2014-01-07 | 2014-01-07 |  | 4d |
| 89 |  | 编制备发计划 | 1d? | 2014-01-08 | 2014-01-08 |  | 3d |
| 90 | 7.3 | **执行运力规划** | 8d? | 2013-12-31 | 2014-01-09 |  | 2d |
| 91 |  | 维护申请 | 1d? | 2013-12-31 | 2013-12-31 |  | 9d |
| 92 |  | 维护批文 | 1d? | 2014-01-01 | 2014-01-01 |  | 8d |
| 93 |  | 完成规划 | 1d? | 2014-01-09 | 2014-01-09 |  | 2d |
| 94 | 7.4 | **更新飞机数据** | 2d? | 2014-01-02 | 2014-01-03 |  | 6d |
| 95 |  | 变更所有权 | 1d? | 2014-01-02 | 2014-01-02 |  | 7d |
| 96 |  | 分配飞机运力 | 1d? | 2014-01-03 | 2014-01-03 |  | 6d |
| 97 | 7.5 | **分析规划执行** | 4d? | 2014-01-07 | 2014-01-10 |  | 1d |
| 98 |  | 查询规划 | 1d? | 2014-01-07 | 2014-01-07 |  | 4d |
| 99 |  | 分析规划执行 | 1d? | 2014-01-08 | 2014-01-08 |  | 3d |
| 100 |  | 查询申请 | 1d? | 2014-01-09 | 2014-01-09 |  | 2d |
| 101 |  | 查询批文 | 1d? | 2014-01-10 | 2014-01-10 |  | 1d |
| 102 | 7.6 | **查询分析** | 7d? | 2013-12-31 | 2014-01-08 |  | 3d |
| 103 |  | 查询飞机档案 | 2d? | 2014-01-03 | 2014-01-06 |  | 5d |
| 104 |  | 分析运力趋势 | 1d? | 2013-12-31 | 2013-12-31 |  | 9d |
| 105 |  | 分析客机运力趋势 | 1d? | 2014-01-01 | 2014-01-01 |  | 8d |
| 106 |  | 统计在册飞机 | 1d? | 2014-01-02 | 2014-01-02 |  | 7d |
| 107 |  | 分析飞机引进方式 | 1d? | 2014-01-03 | 2014-01-03 |  | 6d |
| 108 |  | 分析机队结构 | 1d? | 2014-01-06 | 2014-01-06 |  | 5d |
| 109 |  | 分析飞机机龄 | 1d? | 2014-01-07 | 2014-01-07 |  | 4d |
| 110 |  | 分析发动机引进方式 | 1d? | 2014-01-08 | 2014-01-08 |  | 3d |
| 111 | 8 | **管理门户模块** | 3d? | 2014-01-13 | 2014-01-15 | 80 | 1d |
| 112 |  | 领导门户 | 3d? | 2014-01-13 | 2014-01-15 |  | 1d |
| 113 |  | 规划门户 | 3d? | 2014-01-13 | 2014-01-15 |  | 1d |
| 114 |  | 机务门户 | 3d? | 2014-01-13 | 2014-01-15 |  | 1d |
| 115 |  | 财务门户 | 3d? | 2014-01-13 | 2014-01-15 |  | 1d |
| 116 | 9 | **飞机构型模块** | 4d? | 2014-01-16 | 2014-01-21 | 111 | 0d |
| 117 |  | 领域模型设计 | 3d? | 2014-01-16 | 2014-01-20 |  | 1d |
| 118 | 9.2 | **管理飞机构型** | 4d? | 2014-01-16 | 2014-01-21 |  | 0d |
| 119 |  | 维护飞机系列 | 2d? | 2014-01-16 | 2014-01-17 |  | 2d |
| 120 |  | 维护飞机型号 | 2d? | 2014-01-20 | 2014-01-21 |  | 0d |
| 121 |  | 维护飞机配置 | 2d? | 2014-01-16 | 2014-01-17 |  | 2d |
| 122 | 9.3 | **管理飞机数据** | 4d? | 2014-01-16 | 2014-01-21 |  | 0d |
| 123 |  | 维护飞机证照 | 2d? | 2014-01-20 | 2014-01-21 |  | 0d |
| 124 |  | 查询现役飞机 | 1d? | 2014-01-16 | 2014-01-16 |  | 3d |

## Version 2 (saved 2013-12-11)

Note of the change: 更新项目管理文档。

Last finish stays 2014-01-21. Complete tasks 16 → 19.

Changed:

| ID | Task | Start | Finish | Complete | Total float |
| --- | --- | --- | --- | --- | --- |
| 21 | 管理飞机购买合同 | 2013-11-18 A |  | 0% → 50% | 15d → 0d |
| 32 | 维护飞机交付通知 | 2013-11-20 A | 2013-11-21 A | 0% → 100% | 17d → none |
| 33 | 管理飞机接收日程 | 2013-11-22 A | 2013-11-25 A | 0% → 100% | 15d → none |
| 34 | 维护发动机交付通知 | 2013-11-26 A |  | 0% → 50% | 13d → 0d |
| 35 | 管理发动机接收日程 | 2013-11-28 A |  | 0% → 50% | 11d → 0d |
| 37 | 查询合同 | 2013-12-03 A |  | 0% → 75% | 8d → 0d |
| 41 | 领域模型设计 | 2013-12-10 → 2013-12-06 A (-4d) | 2013-12-12 → 2013-12-10 A (-2d) | 0% → 100% | 6d → none |

## Version 3 (saved 2013-12-16)

Note of the change: 完成查询合同

Last finish stays 2014-01-21. Complete tasks 19 → 22.

Changed:

| ID | Task | Start | Finish | Complete | Total float |
| --- | --- | --- | --- | --- | --- |
| 34 | 维护发动机交付通知 |  | 2013-11-27 A | 50% → 100% | 0d → none |
| 35 | 管理发动机接收日程 |  | 2013-11-29 A | 50% → 100% | 0d → none |
| 37 | 查询合同 |  | 2013-12-04 A | 75% → 100% | 0d → none |
| 43 | 管理飞机付款计划 | 2013-12-10 → 2013-12-13 A (+3d) | 2013-12-11 → 2013-12-16 (+5d) | 0% → 13% | 5d → 0d |
| 47 | 维护采购发票 | 2013-12-10 → 2013-12-13 A (+3d) | 2013-12-11 → 2013-12-16 (+5d) | 0% → 13% | 5d → 0d |
| 48 | 维护预付款发票 | 2013-12-12 → 2013-12-13 A (+1d) | 2013-12-12 → 2013-12-13 (+1d) | 0% → 25% | 4d → 0d |
| 49 | 维护租赁发票 | 2013-12-13 A |  | 0% → 25% | 3d → 0d |

## Version 4 (saved 2013-12-28)

Note of the change: Merge branch 'master' of https://github.com/UniCloud/FRP

Last finish 2014-01-21 → 2014-01-23 (+2d). Complete tasks 22 → 39.

Changed:

| ID | Task | Start | Finish | Duration | Complete | Total float | Other |
| --- | --- | --- | --- | --- | --- | --- | --- |
| 14 | **采购管理模块** |  |  |  | 38% → 69% | 5d → -2d |  |
| 20 | **管理采购合同** | 2013-11-18 A |  |  | 0% → 27% | 7d → 0d |  |
| 21 | 管理飞机购买合同 |  | 2013-11-20 A |  | 50% → 100% | 0d → none |  |
| 30 | **管理接收** |  | 2013-11-29 A |  | 20% → 100% | 11d → none |  |
| 36 | **查询分析** | 2013-12-03 A |  |  | 0% → 29% | 5d → -2d |  |
| 40 | **应付款模块** |  |  |  | 0% → 69% |  |  |
| 42 | **管理付款计划** | 2013-12-10 → 2013-12-12 A (+2d) | 2013-12-13 → 2013-12-16 A (+3d) | 4d? → 3d? | 0% → 100% | 3d → none |  |
| 43 | 管理飞机付款计划 |  | 2013-12-16 A |  | 13% → 100% | 0d → none |  |
| 44 | 管理发动机付款计划 | 2013-12-12 A | 2013-12-12 A |  | 0% → 100% | 4d → none |  |
| 45 | 管理一般付款计划 | 2013-12-13 A | 2013-12-13 A |  | 0% → 100% | 3d → none |  |
| 46 | **管理发票** | 2013-12-10 A | 2013-12-18 → 2013-12-20 A (+2d) | 7d? → 8.25d? | 0% → 100% | 0d → none |  |
| 47 | 维护采购发票 |  | 2013-12-16 → 2013-12-19 A (+3d) |  | 13% → 100% | 0d → none |  |
| 48 | 维护预付款发票 |  | 2013-12-13 A |  | 25% → 100% | 0d → none |  |
| 49 | 维护租赁发票 |  | 2013-12-13 → 2013-12-20 A (+7d) |  | 25% → 100% | 0d → none |  |
| 50 | 维护贷项单 | 2013-12-18 → 2013-12-10 A (-8d) | 2013-12-18 → 2013-12-10 A (-8d) |  | 0% → 100% | 0d → none |  |
| 51 | 维护发动机维修发票 | 2013-12-10 A | 2013-12-11 A |  | 0% → 100% | 5d → none |  |
| 52 | 维护APU维修发票 | 2013-12-12 A | 2013-12-12 A |  | 0% → 100% | 4d → none |  |
| 53 | 维护起落架维修发票 | 2013-12-13 A | 2013-12-13 A |  | 0% → 100% | 3d → none |  |
| 54 | 维护机身维修发票 | 2013-12-18 → 2013-12-16 A (-2d) | 2013-12-18 → 2013-12-16 A (-2d) |  | 0% → 100% | 0d → none |  |
| 55 | 维护付款通知 | 2013-12-19 A | 2013-12-20 A |  | 0% → 100% | 0d → none |  |
| 56 | **管理保函** | 2013-12-17 → 2013-12-10 A (-7d) | 2013-12-20 → 2013-12-19 A (-1d) | 4d? → 8d? | 0% → 100% | 0d → none |  |
| 57 | 维护租赁保证金 | 2013-12-17 → 2013-12-10 A (-7d) | 2013-12-18 → 2013-12-11 A (-7d) |  | 0% → 100% | 2d → none |  |
| 58 | 维护大修保证金 | 2013-12-19 → 2013-12-18 A (-1d) | 2013-12-20 → 2013-12-19 A (-1d) |  | 0% → 100% | 0d → none |  |
| 59 | **管理飞机价格** | 2013-12-13 → 2013-12-11 (-2d) | 2013-12-20 → 2013-12-18 (-2d) |  |  | 0d → 2d |  |
| 60 | 设置飞机价格公式 | 2013-12-13 → 2013-12-11 (-2d) | 2013-12-16 → 2013-12-12 (-4d) |  |  | 4d → 6d |  |
| 61 | 设置发动机价格公式 | 2013-12-17 → 2013-12-13 (-4d) | 2013-12-18 → 2013-12-16 (-2d) |  |  | 2d → 4d |  |
| 62 | 计算飞机价格 | 2013-12-19 → 2013-12-17 (-2d) | 2013-12-20 → 2013-12-18 (-2d) |  |  | 0d → 2d |  |
| 63 | **查询分析** | 2013-12-16 → 2013-12-17 A (+1d) | 2013-12-20 → 2013-12-24 (+4d) | 5d? → 5.25d? | 0% → 29% | 0d → -1.25d |  |
| 64 | 查询付款计划 | 2013-12-16 → 2013-12-17 A (+1d) | 2013-12-16 → 2013-12-17 A (+1d) |  | 0% → 100% | 4d → none |  |
| 65 | 预测资金需求 | 2013-12-16 → 2013-12-17 A (+1d) | 2013-12-17 → 2013-12-18 (+1d) |  | 0% → 50% | 3d → 2d |  |
| 66 | 分析付款计划执行 | 2013-12-16 → 2013-12-17 (+1d) | 2013-12-17 → 2013-12-18 (+1d) |  |  | 3d → 2d |  |
| 67 | 分析维修成本 | 2013-12-19 → 2013-12-20 (+1d) | 2013-12-20 → 2013-12-24 (+4d) |  |  | 0d → -1.25d |  |
| 68 | **项目管理模块** |  | 2013-12-30 → 2014-01-02 (+3d) | 6d? → 8.25d? |  | 7d → -6.25d |  |
| 77 | **执行项目计划** | 2013-12-23 → 2013-12-24 (+1d) | 2013-12-26 → 2014-01-02 (+7d) | 4d? → 7d? |  | 9d → -6.25d |  |
| 78 | 分派任务 | 2013-12-23 → 2013-12-24 (+1d) | 2013-12-24 → 2013-12-31 (+7d) |  |  | 11d → -4.25d |  |
| 79 | 查询项目执行 | 2013-12-25 → 2013-12-31 (+6d) | 2013-12-26 → 2014-01-02 (+7d) |  |  | 9d → -6.25d |  |
| 80 | **运力规划模块** | 2013-12-31 → 2013-12-25 A (-6d) | 2014-01-10 → 2014-01-14 (+4d) | 9d? → 14.25d? | 0% → 11% |  |  |
| 81 | 领域模型设计 | 2013-12-31 → 2013-12-25 A (-6d) | 2014-01-02 → 2013-12-27 A (-6d) |  | 0% → 100% | 7d → none | constraint none → start no earlier than 2013-12-25; resources 丁志浩 → 黄启彬 |
| 82 | **编制运力规划** | 2013-12-31 → 2014-01-02 (+2d) | 2014-01-08 → 2014-01-13 (+5d) |  |  | 3d → 2d |  |
| 83 | 民航五年规划 | 2013-12-31 → 2014-01-02 (+2d) | 2013-12-31 → 2014-01-03 (+3d) |  |  | 9d → 8d |  |
| 84 | 管理五年规划 | 2014-01-01 → 2014-01-03 (+2d) | 2014-01-01 → 2014-01-06 (+5d) |  |  | 8d → 7d |  |
| 85 | 准备编制 | 2014-01-02 → 2014-01-06 (+4d) | 2014-01-02 → 2014-01-07 (+5d) |  |  | 7d → 6d |  |
| 86 | 编制规划 | 2014-01-03 → 2014-01-07 (+4d) | 2014-01-03 → 2014-01-08 (+5d) |  |  | 6d → 5d |  |
| 87 | 发布规划 | 2014-01-06 → 2014-01-08 (+2d) | 2014-01-06 → 2014-01-09 (+3d) |  |  | 5d → 4d |  |
| 88 | 报送规划 | 2014-01-07 → 2014-01-09 (+2d) | 2014-01-07 → 2014-01-10 (+3d) |  |  | 4d → 3d |  |
| 89 | 编制备发计划 | 2014-01-08 → 2014-01-10 (+2d) | 2014-01-08 → 2014-01-13 (+5d) |  |  | 3d → 2d |  |
| 90 | **执行运力规划** | 2013-12-31 → 2014-01-02 (+2d) | 2014-01-09 → 2014-01-14 (+5d) |  |  | 2d → 1d |  |
| 91 | 维护申请 | 2013-12-31 → 2014-01-02 (+2d) | 2013-12-31 → 2014-01-03 (+3d) |  |  | 9d → 8d |  |
| 92 | 维护批文 | 2014-01-01 → 2014-01-03 (+2d) | 2014-01-01 → 2014-01-06 (+5d) |  |  | 8d → 7d |  |
| 93 | 完成规划 | 2014-01-09 → 2014-01-13 (+4d) | 2014-01-09 → 2014-01-14 (+5d) |  |  | 2d → 1d |  |
| 94 | **更新飞机数据** | 2014-01-02 → 2014-01-06 (+4d) | 2014-01-03 → 2014-01-08 (+5d) |  |  | 6d → 5d |  |
| 95 | 变更所有权 | 2014-01-02 → 2014-01-06 (+4d) | 2014-01-02 → 2014-01-07 (+5d) |  |  | 7d → 6d |  |
| 96 | 分配飞机运力 | 2014-01-03 → 2014-01-07 (+4d) | 2014-01-03 → 2014-01-08 (+5d) |  |  | 6d → 5d |  |
| 97 | **分析规划执行** | 2014-01-07 → 2014-01-06 (-1d) |  |  |  | 1d → 3d |  |
| 98 | 查询规划 | 2014-01-07 → 2014-01-06 (-1d) |  |  |  | 4d → 6d |  |
| 99 | 分析规划执行 | 2014-01-08 → 2014-01-07 (-1d) |  |  |  | 3d → 5d |  |
| 100 | 查询申请 | 2014-01-09 → 2014-01-08 (-1d) |  |  |  | 2d → 4d |  |
| 101 | 查询批文 | 2014-01-10 → 2014-01-09 (-1d) |  |  |  | 1d → 3d |  |
| 102 | **查询分析** | 2013-12-31 → 2014-01-02 (+2d) | 2014-01-08 → 2014-01-13 (+5d) |  |  | 3d → 2d |  |
| 103 | 查询飞机档案 | 2014-01-03 → 2014-01-02 (-1d) |  |  |  | 5d → 7d |  |
| 104 | 分析运力趋势 | 2013-12-31 → 2014-01-02 (+2d) | 2013-12-31 → 2014-01-03 (+3d) |  |  | 9d → 8d |  |
| 105 | 分析客机运力趋势 | 2014-01-01 → 2014-01-03 (+2d) | 2014-01-01 → 2014-01-06 (+5d) |  |  | 8d → 7d |  |
| 106 | 统计在册飞机 | 2014-01-02 → 2014-01-06 (+4d) | 2014-01-02 → 2014-01-07 (+5d) |  |  | 7d → 6d |  |
| 107 | 分析飞机引进方式 | 2014-01-03 → 2014-01-07 (+4d) | 2014-01-03 → 2014-01-08 (+5d) |  |  | 6d → 5d |  |
| 108 | 分析机队结构 | 2014-01-06 → 2014-01-08 (+2d) | 2014-01-06 → 2014-01-09 (+3d) |  |  | 5d → 4d |  |
| 109 | 分析飞机机龄 | 2014-01-07 → 2014-01-09 (+2d) | 2014-01-07 → 2014-01-10 (+3d) |  |  | 4d → 3d |  |
| 110 | 分析发动机引进方式 | 2014-01-08 → 2014-01-10 (+2d) | 2014-01-08 → 2014-01-13 (+5d) |  |  | 3d → 2d |  |
| 111 | **管理门户模块** | 2014-01-13 → 2014-01-14 (+1d) | 2014-01-15 → 2014-01-17 (+2d) |  |  |  |  |
| 112 | 领导门户 | 2014-01-13 → 2014-01-14 (+1d) | 2014-01-15 → 2014-01-17 (+2d) |  |  |  |  |
| 113 | 规划门户 | 2014-01-13 → 2014-01-14 (+1d) | 2014-01-15 → 2014-01-17 (+2d) |  |  |  |  |

| ID | Task | Start | Finish |
| --- | --- | --- | --- |
| 114 | 机务门户 | 2014-01-13 → 2014-01-14 (+1d) | 2014-01-15 → 2014-01-17 (+2d) |
| 115 | 财务门户 | 2014-01-13 → 2014-01-14 (+1d) | 2014-01-15 → 2014-01-17 (+2d) |
| 116 | **飞机构型模块** | 2014-01-16 → 2014-01-17 (+1d) | 2014-01-21 → 2014-01-23 (+2d) |
| 117 | 领域模型设计 | 2014-01-16 → 2014-01-17 (+1d) | 2014-01-20 → 2014-01-22 (+2d) |
| 118 | **管理飞机构型** | 2014-01-16 → 2014-01-17 (+1d) | 2014-01-21 → 2014-01-23 (+2d) |
| 119 | 维护飞机系列 | 2014-01-16 → 2014-01-17 (+1d) | 2014-01-17 → 2014-01-21 (+4d) |
| 120 | 维护飞机型号 | 2014-01-20 → 2014-01-21 (+1d) | 2014-01-21 → 2014-01-23 (+2d) |
| 121 | 维护飞机配置 | 2014-01-16 → 2014-01-17 (+1d) | 2014-01-17 → 2014-01-21 (+4d) |
| 122 | **管理飞机数据** | 2014-01-16 → 2014-01-17 (+1d) | 2014-01-21 → 2014-01-23 (+2d) |
| 123 | 维护飞机证照 | 2014-01-20 → 2014-01-21 (+1d) | 2014-01-21 → 2014-01-23 (+2d) |
| 124 | 查询现役飞机 | 2014-01-16 → 2014-01-17 (+1d) | 2014-01-16 → 2014-01-20 (+4d) |

## Version 5 (saved 2014-01-08)

Note of the change: Merge branch 'master' of https://github.com/UniCloud/FRP

Last finish 2014-01-23 → 2014-02-11 (+19d). Complete tasks 39 → 52.

Changed:

| ID | Task | Start | Finish | Duration | Complete | Total float | Other |
| --- | --- | --- | --- | --- | --- | --- | --- |
| 14 | **采购管理模块** |  |  |  | 69% → 88% |  |  |
| 20 | **管理采购合同** |  | 2013-12-02 A |  | 27% → 100% | 0d → none |  |
| 22 | 管理飞机租赁合同 | 2013-11-21 A | 2013-11-22 A |  | 0% → 100% | 6d → none |  |
| 23 | 管理发动机购买合同 | 2013-11-25 A | 2013-11-26 A |  | 0% → 100% | 4d → none |  |
| 24 | 管理发动机租赁合同 | 2013-11-27 A | 2013-11-28 A |  | 0% → 100% | 2d → none |  |
| 25 | 管理BFE合同 | 2013-11-29 A | 2013-12-02 A |  | 0% → 100% | 0d → none |  |
| 68 | **项目管理模块** | 2013-12-23 A | 2014-01-02 → 2014-01-14 (+12d) | 8.25d? → 17d? | 0% → 18% | -6.25d → -14d |  |
| 69 | 领域模型设计 | 2013-12-23 A | 2013-12-25 A |  | 0% → 100% | -1d → none |  |
| 70 | **管理项目模板** | 2013-12-23 → 2013-12-26 (+3d) | 2013-12-30 → 2014-01-02 (+3d) |  |  | -4d → -7d |  |
| 71 | 维护任务模板 | 2013-12-23 → 2013-12-26 (+3d) | 2013-12-24 → 2013-12-27 (+3d) |  |  | 0d → -3d | resources 林晓伟 → 丁志浩 |
| 72 | 维护子项模板 | 2013-12-25 → 2013-12-30 (+5d) | 2013-12-26 → 2013-12-31 (+5d) |  |  | -2d → -5d | resources 林晓伟 → 丁志浩 |
| 73 | 维护项目模板 | 2013-12-27 → 2014-01-01 (+5d) | 2013-12-30 → 2014-01-02 (+3d) |  |  | -4d → -7d | resources 林晓伟 → 丁志浩 |
| 74 | **编制项目计划** | 2013-12-23 → 2014-01-03 (+11d) | 2013-12-26 → 2014-01-08 (+13d) |  |  | -2d → -11d |  |
| 75 | 维护项目计划 | 2013-12-23 → 2014-01-03 (+11d) | 2013-12-24 → 2014-01-06 (+13d) |  |  | 0d → -9d | resources 陈春勇 → 丁志浩 |
| 76 | 发布项目计划 | 2013-12-25 → 2014-01-07 (+13d) | 2013-12-26 → 2014-01-08 (+13d) |  |  | -2d → -11d | resources 陈春勇 → 丁志浩 |
| 77 | **执行项目计划** | 2013-12-24 → 2014-01-09 (+16d) | 2014-01-02 → 2014-01-14 (+12d) | 7d? → 4d? |  | -6.25d → -15d |  |
| 78 | 分派任务 | 2013-12-24 → 2014-01-09 (+16d) | 2013-12-31 → 2014-01-10 (+10d) |  |  | -4.25d → -13d | resources 黄启彬 → 丁志浩 |
| 79 | 查询项目执行 | 2013-12-31 → 2014-01-13 (+13d) | 2014-01-02 → 2014-01-14 (+12d) |  |  | -6.25d → -15d | resources 黄启彬 → 丁志浩 |
| 80 | **运力规划模块** |  | 2014-01-14 → 2014-01-28 (+14d) | 14.25d? → 25d? | 11% → 51% | 1d → 4d |  |
| 82 | **编制运力规划** | 2014-01-02 A | 2014-01-13 → 2014-01-17 (+4d) | 7d? → 11.15d? | 0% → 74% | 2d → 11.6d |  |
| 83 | 民航五年规划 | 2014-01-02 A | 2014-01-03 A |  | 0% → 100% | 8d → none |  |
| 84 | 管理五年规划 | 2014-01-03 A | 2014-01-06 A |  | 0% → 100% | 7d → none |  |
| 85 | 准备编制 | 2014-01-06 A | 2014-01-07 → 2014-01-15 (+8d) |  | 0% → 80% | 6d → 13.8d |  |
| 86 | 编制规划 | 2014-01-07 → 2014-01-15 (+8d) | 2014-01-08 → 2014-01-16 (+8d) |  |  | 5d → 12.8d |  |
| 87 | 发布规划 | 2014-01-08 A | 2014-01-09 → 2014-01-17 (+8d) |  | 0% → 80% | 4d → 11.6d |  |
| 88 | 报送规划 | 2014-01-09 A | 2014-01-10 → 2014-01-17 (+7d) |  | 0% → 80% | 3d → 11.6d |  |
| 89 | 编制备发计划 | 2014-01-10 A | 2014-01-13 → 2014-01-17 (+4d) |  | 0% → 80% | 2d → 11.6d |  |
| 90 | **执行运力规划** | 2014-01-02 → 2014-01-16 (+14d) | 2014-01-14 → 2014-01-20 (+6d) | 8d? → 2.8d? |  | 1d → 10d |  |
| 91 | 维护申请 | 2014-01-02 → 2014-01-17 (+15d) | 2014-01-03 → 2014-01-17 (+14d) |  |  | 8d → 11d |  |
| 92 | 维护批文 | 2014-01-03 → 2014-01-20 (+17d) | 2014-01-06 → 2014-01-20 (+14d) |  |  | 7d → 10d |  |
| 93 | 完成规划 | 2014-01-13 → 2014-01-16 (+3d) | 2014-01-14 → 2014-01-17 (+3d) |  |  | 1d → 11.8d |  |
| 94 | **更新飞机数据** | 2014-01-06 → 2014-01-21 (+15d) | 2014-01-08 → 2014-01-22 (+14d) |  |  | 5d → 8d |  |
| 95 | 变更所有权 | 2014-01-06 → 2014-01-21 (+15d) | 2014-01-07 → 2014-01-21 (+14d) |  |  | 6d → 9d |  |
| 96 | 分配飞机运力 | 2014-01-07 → 2014-01-22 (+15d) | 2014-01-08 → 2014-01-22 (+14d) |  |  | 5d → 8d |  |
| 97 | **分析规划执行** | 2014-01-06 → 2014-01-23 (+17d) | 2014-01-10 → 2014-01-28 (+18d) |  |  | 3d → 4d |  |
| 98 | 查询规划 | 2014-01-06 → 2014-01-23 (+17d) | 2014-01-07 → 2014-01-23 (+16d) |  |  | 6d → 7d | resources 丁志浩 → 陈春勇 |
| 99 | 分析规划执行 | 2014-01-07 → 2014-01-24 (+17d) | 2014-01-08 → 2014-01-24 (+16d) |  |  | 5d → 6d | resources 丁志浩 → 陈春勇 |
| 100 | 查询申请 | 2014-01-08 → 2014-01-27 (+19d) | 2014-01-09 → 2014-01-27 (+18d) |  |  | 4d → 5d | resources 丁志浩 → 陈春勇 |
| 101 | 查询批文 | 2014-01-09 → 2014-01-28 (+19d) | 2014-01-10 → 2014-01-28 (+18d) |  |  | 3d → 4d | resources 丁志浩 → 陈春勇 |
| 102 | **查询分析** | 2014-01-02 A | 2014-01-13 → 2014-01-16 (+3d) | 7d? → 10.75d? | 0% → 67% | 2d → 12d |  |
| 103 | 查询飞机档案 | 2014-01-02 → 2014-01-15 (+13d) | 2014-01-06 → 2014-01-16 (+10d) |  |  | 7d → 12d | resources 丁志浩 → 陈春勇 |
| 104 | 分析运力趋势 | 2014-01-02 A | 2014-01-03 A |  | 0% → 100% | 8d → none |  |
| 105 | 分析客机运力趋势 | 2014-01-03 A | 2014-01-06 A |  | 0% → 100% | 7d → none |  |
| 106 | 统计在册飞机 | 2014-01-06 A | 2014-01-07 A |  | 0% → 100% | 6d → none |  |
| 107 | 分析飞机引进方式 | 2014-01-07 A | 2014-01-08 A |  | 0% → 100% | 5d → none |  |
| 108 | 分析机队结构 | 2014-01-08 A | 2014-01-09 A |  | 0% → 100% | 4d → none |  |
| 109 | 分析飞机机龄 | 2014-01-09 A | 2014-01-10 A |  | 0% → 100% | 3d → none |  |
| 110 | 分析发动机引进方式 | 2014-01-10 → 2014-01-15 (+5d) | 2014-01-13 → 2014-01-15 (+2d) |  |  | 2d → 13d |  |
| 111 | **管理门户模块** | 2014-01-14 → 2014-01-29 (+15d) | 2014-01-17 → 2014-02-05 (+19d) | 3d? → 6d? |  |  |  |
| 112 | 领导门户 | 2014-01-14 → 2014-01-29 (+15d) | 2014-01-17 → 2014-01-31 (+14d) |  |  | 1d → 4d | resources 丁志浩 → 林晓伟 |
| 113 | 规划门户 | 2014-01-14 → 2014-01-29 (+15d) | 2014-01-17 → 2014-01-31 (+14d) |  |  | 1d → 4d |  |
| 114 | 机务门户 | 2014-01-14 → 2014-01-29 (+15d) | 2014-01-17 → 2014-01-31 (+14d) |  |  | 1d → 4d |  |
| 115 | 财务门户 | 2014-01-14 → 2014-02-03 (+20d) | 2014-01-17 → 2014-02-05 (+19d) |  |  |  |  |
| 116 | **飞机构型模块** | 2014-01-17 → 2014-02-06 (+20d) | 2014-01-23 → 2014-02-11 (+19d) |  |  |  |  |
| 117 | 领域模型设计 | 2014-01-17 → 2014-02-06 (+20d) | 2014-01-22 → 2014-02-10 (+19d) |  |  |  |  |
| 118 | **管理飞机构型** | 2014-01-17 → 2014-02-06 (+20d) | 2014-01-23 → 2014-02-11 (+19d) |  |  |  |  |
| 119 | 维护飞机系列 | 2014-01-17 → 2014-02-06 (+20d) | 2014-01-21 → 2014-02-07 (+17d) |  |  |  |  |
| 120 | 维护飞机型号 | 2014-01-21 → 2014-02-10 (+20d) | 2014-01-23 → 2014-02-11 (+19d) |  |  |  |  |
| 121 | 维护飞机配置 | 2014-01-17 → 2014-02-06 (+20d) | 2014-01-21 → 2014-02-07 (+17d) |  |  |  |  |
| 122 | **管理飞机数据** | 2014-01-17 → 2014-02-06 (+20d) | 2014-01-23 → 2014-02-11 (+19d) |  |  |  |  |
| 123 | 维护飞机证照 | 2014-01-21 → 2014-02-10 (+20d) | 2014-01-23 → 2014-02-11 (+19d) |  |  |  |  |
| 124 | 查询现役飞机 | 2014-01-17 → 2014-02-06 (+20d) | 2014-01-20 → 2014-02-06 (+17d) |  |  |  |  |

## Version 6 (saved 2014-01-13)

Note of the change: 修改附件管理方式。

Last finish stays 2014-02-11.

Added:

| ID | Task | Duration | Start | Finish |
| --- | --- | --- | --- | --- |
| 125 | **基础管理模块** | 1d | 2013-11-01 | 2013-11-01 |
| 126 | **管理授权** | 1d | 2013-11-01 | 2013-11-01 |
| 127 | 管理角色 | 1d? | 2013-11-01 | 2013-11-01 |
| 128 | 管理用户 | 1d? | 2013-11-01 | 2013-11-01 |
| 129 | **管理运营资质** | 1d | 2013-11-01 | 2013-11-01 |
| 130 | 维护证照种类 | 1d? | 2013-11-01 | 2013-11-01 |
| 131 | 维护经营证照 | 1d? | 2013-11-01 | 2013-11-01 |
| 132 | **维护基础配置** | 1d | 2013-11-01 | 2013-11-01 |
| 133 | 维护分支机构 | 1d? | 2013-11-01 | 2013-11-01 |
| 134 | 配置颜色 | 1d? | 2013-11-01 | 2013-11-01 |
| 135 | 管理提醒策略 | 1d? | 2013-11-01 | 2013-11-01 |
| 136 | **文档库模块** | 1d | 2013-11-01 | 2013-11-01 |
| 137 | 维护文档类型 | 1d? | 2013-11-01 | 2013-11-01 |
| 138 | 搜索文档 | 1d? | 2013-11-01 | 2013-11-01 |
| 139 | **发动机管理模块** | 1d | 2013-11-01 | 2013-11-01 |
| 140 | 管理发动机滑油 | 1d? | 2013-11-01 | 2013-11-01 |
| 141 | 管理APU滑油 | 1d? | 2013-11-01 | 2013-11-01 |
| 142 | **附件管理模块** | 1d | 2013-11-01 | 2013-11-01 |
| 143 | **管理SCN** | 1d | 2013-11-01 | 2013-11-01 |
| 144 | 维护SCN | 1d? | 2013-11-01 | 2013-11-01 |

Changed:

| ID | Task | Start | Finish | Total float |
| --- | --- | --- | --- | --- |
| 39 | 分析发动机价格 | 2013-12-06 → 2013-11-04 (-32d) | 2013-12-09 → 2013-11-05 (-34d) | -2d → 0d |
| 60 | 设置飞机价格公式 | 2013-12-11 → 2013-11-04 (-37d) | 2013-12-12 → 2013-11-05 (-37d) | 6d → 0d |
| 61 | 设置发动机价格公式 | 2013-12-13 → 2013-11-04 (-39d) | 2013-12-16 → 2013-11-05 (-41d) | 4d → 0d |
| 62 | 计算飞机价格 | 2013-12-17 → 2013-11-08 (-39d) | 2013-12-18 → 2013-11-11 (-37d) | 2d → 0d |
| 71 | 维护任务模板 | 2013-12-26 → 2013-11-04 (-52d) | 2013-12-27 → 2013-11-05 (-52d) | -3d → 0d |
| 72 | 维护子项模板 | 2013-12-30 → 2013-11-08 (-52d) | 2013-12-31 → 2013-11-11 (-50d) | -5d → 0d |
| 73 | 维护项目模板 | 2014-01-01 → 2013-11-11 (-51d) | 2014-01-02 → 2013-11-12 (-51d) | -7d → 0d |
| 75 | 维护项目计划 | 2014-01-03 → 2013-11-12 (-52d) | 2014-01-06 → 2013-11-13 (-54d) | -9d → 0d |
| 76 | 发布项目计划 | 2014-01-07 → 2013-11-18 (-50d) | 2014-01-08 → 2013-11-19 (-50d) | -11d → 0d |
| 78 | 分派任务 | 2014-01-09 → 2013-11-18 (-52d) | 2014-01-10 → 2013-11-19 (-52d) | -13d → 0d |
| 79 | 查询项目执行 | 2014-01-13 → 2013-11-22 (-52d) | 2014-01-14 → 2013-11-25 (-50d) | -15d → 0d |
| 86 | 编制规划 | 2014-01-15 → 2013-11-01 (-75d) | 2014-01-16 → 2013-11-04 (-73d) | 12.8d → 0d |
| 87 | 发布规划 |  | 2014-01-17 → 2014-01-23 (+6d) | 11.6d → 0d |
| 88 | 报送规划 |  | 2014-01-17 → 2014-01-22 (+5d) | 11.6d → 0d |
| 89 | 编制备发计划 |  | 2014-01-17 → 2014-01-21 (+4d) | 11.6d → 0d |
| 91 | 维护申请 | 2014-01-17 → 2013-11-04 (-74d) | 2014-01-17 → 2013-11-04 (-74d) | 11d → 0d |
| 92 | 维护批文 | 2014-01-20 → 2013-11-06 (-75d) | 2014-01-20 → 2013-11-06 (-75d) | 10d → 0d |
| 93 | 完成规划 | 2014-01-16 → 2013-11-04 (-73d) | 2014-01-17 → 2013-11-04 (-74d) | 11.8d → 0d |
| 95 | 变更所有权 | 2014-01-21 → 2013-11-07 (-75d) | 2014-01-21 → 2013-11-07 (-75d) | 9d → 0d |
| 96 | 分配飞机运力 | 2014-01-22 → 2013-11-08 (-75d) | 2014-01-22 → 2013-11-08 (-75d) | 8d → 0d |
| 98 | 查询规划 | 2014-01-23 → 2013-11-11 (-73d) | 2014-01-23 → 2013-11-11 (-73d) | 7d → 0d |
| 99 | 分析规划执行 | 2014-01-24 → 2013-11-11 (-74d) | 2014-01-24 → 2013-11-11 (-74d) | 6d → 0d |
| 100 | 查询申请 | 2014-01-27 → 2013-11-13 (-75d) | 2014-01-27 → 2013-11-13 (-75d) | 5d → 0d |
| 101 | 查询批文 | 2014-01-28 → 2013-11-14 (-75d) | 2014-01-28 → 2013-11-14 (-75d) | 4d → 0d |
| 115 | 财务门户 | 2014-02-03 → 2013-11-06 (-89d) | 2014-02-05 → 2013-11-08 (-89d) | 1d → 0d |
| 120 | 维护飞机型号 | 2014-02-10 → 2013-11-05 (-97d) | 2014-02-11 → 2013-11-06 (-97d) |  |
| 123 | 维护飞机证照 | 2014-02-10 → 2013-11-05 (-97d) | 2014-02-11 → 2013-11-06 (-97d) |  |

## Version 7 (saved 2014-01-14)

Note of the change: Merge branch 'master' of https://github.com/UniCloud/FRP

Last finish 2014-02-11 → 2014-02-19 (+8d). Complete tasks 52 → 59.

Added:

| ID | Task | Duration | Start | Finish | Constraint | Resources |
| --- | --- | --- | --- | --- | --- | --- |
| 30 | 管理机身维修合同 | 1d? | 2014-01-14 | 2014-01-14 | start no earlier than 2014-01-14 | 林晓伟 |
| 125 | 领域模型设计 | 3d | 2014-01-14 | 2014-01-16 | start no earlier than 2014-01-14 | 陈春勇 |

Removed: 96 分配飞机运力; 110 分析发动机引进方式

Changed:

| ID | Task | Start | Finish | Duration | Complete | Total float | Other |
| --- | --- | --- | --- | --- | --- | --- | --- |
| 14 | **采购管理模块** |  | 2013-12-09 → 2014-01-21 (+43d) | 16d? → 47d? | 88% → 86% | 0d → -33d | baseline finish 2013-12-09 → 2014-01-21 |
| 15 | **管理合作公司** |  | 2013-11-27 A → 2013-11-27 |  | 100% → 99% | none → 6d |  |
| 16 | 维护供应商类别 |  | 2013-11-19 A → 2013-11-19 |  | 100% → 95% | none → 12d |  |
| 26 | **管理维修合同** |  | 2013-11-25 A → 2014-01-14 (+50d) | 6d? → 42d? | 100% → 86% | none → -31d | baseline finish 2013-11-25 → 2014-01-14 |
| 37 | **查询分析** |  | 2013-12-09 → 2014-01-21 (+43d) | 5d? → 36d? |  | 0d → -33d | baseline finish 2013-12-09 → 2014-01-21 |
| 39 | 分析飞机价格 | 2013-12-03 → 2014-01-15 (+43d) | 2013-12-05 → 2014-01-17 (+43d) |  |  | 0d → -31d | baseline start 2013-12-03 → 2014-01-15; baseline finish 2013-12-05 → 2014-01-17 |
| 40 | 分析发动机价格 | 2013-11-04 → 2014-01-20 (+77d) | 2013-11-05 → 2014-01-21 (+77d) |  |  | 0d → -33d | baseline start 2013-12-06 → 2014-01-20; baseline finish 2013-12-09 → 2014-01-21 |
| 42 | 领域模型设计 |  |  |  |  |  | baseline start 2013-12-10 → 2013-12-06; baseline finish 2013-12-12 → 2013-12-10 |
| 43 | **管理付款计划** |  |  |  |  |  | baseline start 2013-12-10 → 2013-12-12; baseline finish 2013-12-13 → 2013-12-16 |
| 44 | 管理飞机付款计划 |  |  |  |  |  | baseline start 2013-12-10 → 2013-12-13; baseline finish 2013-12-11 → 2013-12-16 |
| 47 | **管理发票** |  |  |  |  |  | baseline finish 2013-12-18 → 2013-12-20 |
| 48 | 维护采购发票 |  |  |  |  |  | baseline start 2013-12-10 → 2013-12-13; baseline finish 2013-12-11 → 2013-12-19 |
| 49 | 维护预付款发票 |  |  |  |  |  | baseline start 2013-12-12 → 2013-12-13; baseline finish 2013-12-12 → 2013-12-13 |
| 50 | 维护租赁发票 |  |  |  |  |  | baseline finish 2013-12-13 → 2013-12-20 |
| 51 | 维护贷项单 |  |  |  |  |  | baseline start 2013-12-18 → 2013-12-10; baseline finish 2013-12-18 → 2013-12-10 |
| 55 | 维护机身维修发票 |  |  |  |  |  | baseline start 2013-12-18 → 2013-12-16; baseline finish 2013-12-18 → 2013-12-16 |
| 57 | **管理保函** |  |  |  |  |  | baseline start 2013-12-17 → 2013-12-10; baseline finish 2013-12-20 → 2013-12-19 |
| 58 | 维护租赁保证金 |  |  |  |  |  | baseline start 2013-12-17 → 2013-12-10; baseline finish 2013-12-18 → 2013-12-11 |
| 59 | 维护大修保证金 |  |  |  |  |  | baseline start 2013-12-19 → 2013-12-18; baseline finish 2013-12-20 → 2013-12-19 |
| 60 | **管理飞机价格** |  |  |  |  | 0d → 2d | baseline start 2013-12-13 → 2013-12-11; baseline finish 2013-12-20 → 2013-12-18 |
| 61 | 设置飞机价格公式 | 2013-11-04 → 2013-12-11 (+37d) | 2013-11-05 → 2013-12-12 (+37d) |  |  | 0d → 6d | baseline start 2013-12-13 → 2013-12-11; baseline finish 2013-12-16 → 2013-12-12 |
| 62 | 设置发动机价格公式 | 2013-11-04 → 2013-12-13 (+39d) | 2013-11-05 → 2013-12-16 (+41d) |  |  | 0d → 4d | baseline start 2013-12-17 → 2013-12-13; baseline finish 2013-12-18 → 2013-12-16 |
| 63 | 计算飞机价格 | 2013-11-08 → 2013-12-17 (+39d) | 2013-11-11 → 2013-12-18 (+37d) |  |  | 0d → 2d | baseline start 2013-12-19 → 2013-12-17; baseline finish 2013-12-20 → 2013-12-18 |
| 64 | **查询分析** |  |  |  |  |  | baseline start 2013-12-16 → 2013-12-17; baseline finish 2013-12-20 → 2013-12-24 |
| 65 | 查询付款计划 |  |  |  |  |  | baseline start 2013-12-16 → 2013-12-17; baseline finish 2013-12-16 → 2013-12-17 |
| 66 | 预测资金需求 |  |  |  |  | 0d → 2d | baseline start 2013-12-16 → 2013-12-17; baseline finish 2013-12-17 → 2013-12-18 |
| 67 | 分析付款计划执行 |  |  |  |  |  | baseline start 2013-12-16 → 2013-12-17; baseline finish 2013-12-17 → 2013-12-18 |
| 68 | 分析维修成本 |  |  |  |  |  | baseline start 2013-12-19 → 2013-12-20; baseline finish 2013-12-20 → 2013-12-24 |
| 69 | **项目管理模块** |  |  |  |  | 0d → -14d | baseline finish 2013-12-30 → 2014-01-14 |
| 71 | **管理项目模板** |  |  |  |  | 0d → -41d | baseline start 2013-12-23 → 2013-12-26; baseline finish 2013-12-30 → 2014-01-02 |
| 72 | 维护任务模板 | 2013-11-04 → 2013-12-26 (+52d) | 2013-11-05 → 2013-12-27 (+52d) |  |  | 0d → -37d | baseline start 2013-12-23 → 2013-12-26; baseline finish 2013-12-24 → 2013-12-27 |
| 73 | 维护子项模板 | 2013-11-08 → 2013-12-30 (+52d) | 2013-11-11 → 2013-12-31 (+50d) |  |  | 0d → -39d | baseline start 2013-12-25 → 2013-12-30; baseline finish 2013-12-26 → 2013-12-31 |
| 74 | 维护项目模板 | 2013-11-11 → 2014-01-01 (+51d) | 2013-11-12 → 2014-01-02 (+51d) |  |  | 0d → -41d | baseline start 2013-12-27 → 2014-01-01; baseline finish 2013-12-30 → 2014-01-02 |
| 75 | **编制项目计划** |  |  |  |  | 0d → -45d | baseline start 2013-12-23 → 2014-01-03; baseline finish 2013-12-26 → 2014-01-08 |
| 76 | 维护项目计划 | 2013-11-12 → 2014-01-03 (+52d) | 2013-11-13 → 2014-01-06 (+54d) |  |  | 0d → -43d | baseline start 2013-12-23 → 2014-01-03; baseline finish 2013-12-24 → 2014-01-06 |
| 77 | 发布项目计划 | 2013-11-18 → 2014-01-07 (+50d) | 2013-11-19 → 2014-01-08 (+50d) |  |  | 0d → -45d | baseline start 2013-12-25 → 2014-01-07; baseline finish 2013-12-26 → 2014-01-08 |
| 78 | **执行项目计划** |  |  |  |  | 0d → -49d | baseline start 2013-12-23 → 2014-01-09; baseline finish 2013-12-26 → 2014-01-14 |
| 79 | 分派任务 | 2013-11-18 → 2014-01-09 (+52d) | 2013-11-19 → 2014-01-10 (+52d) |  |  | 0d → -47d | baseline start 2013-12-23 → 2014-01-09; baseline finish 2013-12-24 → 2014-01-10 |
| 80 | 查询项目执行 | 2013-11-22 → 2014-01-13 (+52d) | 2013-11-25 → 2014-01-14 (+50d) |  |  | 0d → -49d | baseline start 2013-12-25 → 2014-01-13; baseline finish 2013-12-26 → 2014-01-14 |
| 81 | **运力规划模块** | 2013-12-25 A → 2013-11-07 A (-48d) | 2014-01-28 → 2014-02-03 (+6d) | 25d? → 62.9d? | 51% → 80% | 0d → 6d | baseline start 2013-12-31 → 2013-11-07; baseline finish 2014-01-10 → 2014-02-03 |
| 82 | 领域模型设计 |  |  |  |  |  | baseline start 2013-12-31 → 2013-12-25; baseline finish 2014-01-02 → 2013-12-27 |
| 83 | **编制运力规划** |  | 2014-01-17 → 2014-01-15 (-2d) | 11.15d? → 8.95d? | 74% → 97% | 0d → 19.7d | baseline start 2013-12-31 → 2014-01-02; baseline finish 2014-01-08 → 2014-01-15 |
| 84 | 民航五年规划 |  |  |  |  |  | baseline start 2013-12-31 → 2014-01-02; baseline finish 2013-12-31 → 2014-01-03 |
| 85 | 管理五年规划 |  |  |  |  |  | baseline start 2014-01-01 → 2014-01-03; baseline finish 2014-01-01 → 2014-01-06 |
| 86 | 准备编制 |  | 2014-01-15 → 2014-01-08 A (-7d) |  | 80% → 100% | 0d → none | constraint none → finish no earlier than 2014-01-07; baseline start 2014-01-02 → 2014-01-06; baseline finish 2014-01-02 → 2014-01-08 |
| 87 | 编制规划 | 2013-11-01 → 2014-01-06 A (+66d) | 2013-11-04 → 2014-01-15 (+72d) |  | 0% → 80% | 0d → 19.7d | constraint none → finish no earlier than 2014-01-07; baseline start 2014-01-03 → 2014-01-06; baseline finish 2014-01-03 → 2014-01-15 |
| 88 | 发布规划 |  | 2014-01-23 → 2014-01-09 A (-14d) |  | 80% → 100% | 0d → none | constraint none → finish no earlier than 2014-01-09; baseline start 2014-01-06 → 2014-01-08; baseline finish 2014-01-06 → 2014-01-09 |
| 89 | 报送规划 |  | 2014-01-22 → 2014-01-10 A (-12d) |  | 80% → 100% | 0d → none | constraint none → finish no earlier than 2014-01-09; baseline start 2014-01-07 → 2014-01-09; baseline finish 2014-01-07 → 2014-01-10 |
| 90 | 编制备发计划 |  | 2014-01-21 → 2014-01-14 A (-7d) | 1d? → 0.8d? | 80% → 100% | 0d → none | baseline start 2014-01-08 → 2014-01-10; baseline finish 2014-01-08 → 2014-01-14 |
| 91 | **执行运力规划** | 2014-01-16 → 2014-01-14 A (-2d) | 2014-01-20 → 2014-01-31 (+11d) | 2.8d? → 13.1d? | 0% → 87% | 0d → 7.8d | baseline start 2013-12-31 → 2014-01-14; baseline finish 2014-01-09 → 2014-01-31 |
| 92 | 维护申请 | 2013-11-04 → 2014-01-14 A (+71d) | 2013-11-04 → 2014-01-31 (+88d) |  | 0% → 90% | 0d → 7.8d | baseline start 2013-12-31 → 2014-01-14; baseline finish 2013-12-31 → 2014-01-31 |
| 93 | 维护批文 | 2013-11-06 → 2014-01-15 A (+70d) | 2013-11-06 → 2014-01-15 (+70d) |  | 0% → 90% | 0d → 18.9d | baseline start 2014-01-01 → 2014-01-15; baseline finish 2014-01-01 → 2014-01-15 |
| 94 | 完成规划 | 2013-11-04 → 2014-01-14 A (+71d) | 2013-11-04 → 2014-01-15 (+72d) |  | 0% → 80% | 0d → 19.7d | baseline start 2014-01-09 → 2014-01-14; baseline finish 2014-01-09 → 2014-01-15 |
| 95 | **更新飞机数据** | 2014-01-21 → 2013-11-07 A (-75d) | 2014-01-22 → 2013-11-07 A (-76d) | 2d? → 1d? | 0% → 100% | 0d → none | baseline start 2014-01-02 → 2013-11-07; baseline finish 2014-01-03 → 2013-11-07 |
| 96 | 变更所有权 | 2013-11-07 A | 2013-11-07 A |  | 0% → 100% | 0d → none | baseline start 2014-01-02 → 2013-11-07; baseline finish 2014-01-02 → 2013-11-07 |
| 97 | **分析规划执行** | 2014-01-23 → 2013-11-13 A (-71d) | 2014-01-28 → 2014-02-03 (+6d) | 4d? → 58.9d? | 0% → 44% | 0d → 6d | baseline start 2014-01-07 → 2013-11-13; baseline finish 2014-01-10 → 2014-02-03 |
| 98 | 查询规划 | 2013-11-11 → 2014-01-06 A (+56d) | 2013-11-11 → 2014-02-11 A (+92d) | 1d? → 2d? | 0% → 100% | 0d → none | constraint none → finish no earlier than 2014-02-11; baseline start 2014-01-07 → 2014-01-14; baseline finish 2014-01-07 → 2014-02-03 |
| 99 | 分析规划执行 | 2013-11-11 → 2014-02-10 (+91d) | 2013-11-11 → 2014-02-10 (+91d) |  |  |  | constraint none → start no earlier than 2014-02-10; baseline start 2014-01-08 → 2014-01-16; baseline finish 2014-01-08 → 2014-01-16 |
| 100 | 查询申请 | 2013-11-13 A | 2013-11-13 A |  | 0% → 100% | 0d → none | baseline start 2014-01-09 → 2013-11-13; baseline finish 2014-01-09 → 2013-11-13 |
| 101 | 查询批文 | 2013-11-14 A | 2013-11-14 A |  | 0% → 100% | 0d → none | baseline start 2014-01-10 → 2013-11-14; baseline finish 2014-01-10 → 2013-11-14 |
| 102 | **查询分析** |  | 2014-01-16 → 2014-01-30 (+14d) | 10.75d? → 20.75d? | 67% → 75% | 0d → 7.9d | baseline start 2013-12-31 → 2014-01-02; baseline finish 2014-01-08 → 2014-01-30 |
| 103 | 查询飞机档案 | 2014-01-15 → 2014-01-29 (+14d) | 2014-01-16 → 2014-01-30 (+14d) | 2d? → 2d |  | 0d → 7.9d | constraint none → finish no earlier than 2014-01-30; baseline start 2014-01-03 → 2014-01-29; baseline finish 2014-01-06 → 2014-01-30 |
| 104 | 分析运力趋势 |  |  |  |  |  | baseline start 2013-12-31 → 2014-01-02; baseline finish 2013-12-31 → 2014-01-03 |
| 105 | 分析客机运力趋势 |  |  |  |  |  | baseline start 2014-01-01 → 2014-01-03; baseline finish 2014-01-01 → 2014-01-06 |
| 106 | 统计在册飞机 |  |  |  |  |  | baseline start 2014-01-02 → 2014-01-06; baseline finish 2014-01-02 → 2014-01-07 |
| 107 | 分析飞机引进方式 |  |  |  |  |  | baseline start 2014-01-03 → 2014-01-07; baseline finish 2014-01-03 → 2014-01-08 |
| 108 | 分析机队结构 |  |  |  |  |  | baseline start 2014-01-06 → 2014-01-08; baseline finish 2014-01-06 → 2014-01-09 |
| 109 | 分析飞机机龄 |  |  |  |  |  | baseline start 2014-01-07 → 2014-01-09; baseline finish 2014-01-07 → 2014-01-10 |
| 110 | **管理门户模块** | 2014-01-29 → 2014-02-03 (+5d) | 2014-02-05 → 2014-02-06 (+1d) | 6d? → 3d? |  |  | baseline start 2014-01-13 → 2014-02-03; baseline finish 2014-01-15 → 2014-02-06 |
| 111 | 领导门户 | 2014-01-29 → 2014-02-03 (+5d) | 2014-01-31 → 2014-02-06 (+6d) |  |  |  | baseline start 2014-01-13 → 2014-02-03; baseline finish 2014-01-15 → 2014-02-06 |

| ID | Task | Start | Finish | Duration | Total float | Other |
| --- | --- | --- | --- | --- | --- | --- |
| 112 | 规划门户 | 2014-01-29 → 2014-02-03 (+5d) | 2014-01-31 → 2014-02-06 (+6d) |  |  | baseline start 2014-01-13 → 2014-02-03; baseline finish 2014-01-15 → 2014-02-06 |
| 113 | 机务门户 | 2014-01-29 → 2014-02-03 (+5d) | 2014-01-31 → 2014-02-06 (+6d) |  |  | resources 陈春勇 → 丁志浩; baseline start 2014-01-13 → 2014-02-03; baseline finish 2014-01-15 → 2014-02-06 |
| 114 | 财务门户 | 2013-11-06 → 2014-01-29 (+84d) | 2013-11-08 → 2014-01-31 (+84d) |  |  | constraint none → start no earlier than 2014-01-29; resources 林晓伟 → 陈春勇; baseline start 2014-01-13 → 2014-02-03; baseline finish 2014-01-15 → 2014-02-06 |
| 115 | **飞机构型模块** |  | 2014-02-11 → 2014-02-19 (+8d) | 4d? → 9d? |  | baseline start 2014-01-16 → 2014-02-06; baseline finish 2014-01-21 → 2014-02-19 |
| 116 | 领域模型设计 | 2014-02-06 → 2014-01-14 (-23d) | 2014-02-10 → 2014-01-16 (-25d) |  |  | constraint none → start no earlier than 2014-01-14; resources 丁志浩 → 林晓伟; baseline start 2014-01-16 → 2014-02-06; baseline finish 2014-01-20 → 2014-02-11 |
| 117 | **管理飞机构型** | 2014-02-06 → 2014-02-11 (+5d) | 2014-02-11 → 2014-02-17 (+6d) |  |  | baseline start 2014-01-16 → 2014-02-11; baseline finish 2014-01-21 → 2014-02-17 |
| 118 | 维护飞机系列 | 2014-02-06 → 2014-01-22 (-15d) | 2014-02-07 → 2014-01-23 (-15d) |  |  | constraint none → start no earlier than 2014-01-17; resources 黄启彬 → 林晓伟; baseline start 2014-01-16 → 2014-02-11; baseline finish 2014-01-17 → 2014-02-13 |
| 119 | 维护飞机型号 | 2013-11-05 → 2014-01-28 (+84d) | 2013-11-06 → 2014-01-28 (+83d) | 2d? → 1d? |  | constraint none → finish no earlier than 2014-01-21; resources 黄启彬 → 林晓伟; baseline start 2014-01-20 → 2014-02-13; baseline finish 2014-01-21 → 2014-02-14 |
| 120 | 维护飞机配置 | 2014-02-06 → 2014-01-30 (-7d) | 2014-02-07 → 2014-01-30 (-8d) | 2d? → 1d? |  | constraint none → finish no earlier than 2014-01-22; resources 陈春勇 → 林晓伟; baseline start 2014-01-16 → 2014-02-14; baseline finish 2014-01-17 → 2014-02-17 |
| 121 | **管理飞机数据** | 2014-02-06 → 2014-02-17 (+11d) | 2014-02-11 → 2014-02-19 (+8d) | 4d? → 2d? |  | baseline start 2014-01-16 → 2014-02-17; baseline finish 2014-01-21 → 2014-02-19 |
| 122 | 维护飞机证照 | 2013-11-05 → 2014-02-03 (+90d) | 2013-11-06 → 2014-02-03 (+89d) | 2d? → 1d? |  | constraint none → finish no earlier than 2014-01-23; resources 陈春勇 → 林晓伟; baseline start 2014-01-20 → 2014-02-17; baseline finish 2014-01-21 → 2014-02-18 |
| 123 | 查询现役飞机 | 2014-02-06 → 2014-02-05 (-1d) | 2014-02-06 → 2014-02-05 (-1d) |  |  | constraint none → finish no earlier than 2014-01-24; baseline start 2014-01-16 → 2014-02-18; baseline finish 2014-01-16 → 2014-02-19 |
| 124 | **基础管理模块** | 2013-11-01 → 2014-01-14 (+74d) | 2013-11-01 → 2014-02-11 (+102d) | 1d → 19.8d? |  | baseline start none → 2014-01-14; baseline finish none → 2014-02-11 |
| 126 | **管理授权** | 2013-11-01 → 2014-01-17 (+77d) | 2013-11-01 → 2014-01-21 (+81d) | 1d → 3d? | 0d → 20.9d | baseline start none → 2014-01-17; baseline finish none → 2014-01-21 |
| 127 | 管理角色 | 2013-11-01 → 2014-01-17 (+77d) | 2013-11-01 → 2014-01-20 (+80d) | 1d? → 2d? | 0d → 21.9d | constraint none → finish no earlier than 2014-01-20; resources none → 陈春勇; baseline start none → 2014-01-17; baseline finish none → 2014-01-20 |
| 128 | 管理用户 | 2013-11-01 → 2014-01-21 (+81d) | 2013-11-01 → 2014-01-21 (+81d) |  | 0d → 20.9d | constraint none → start no earlier than 2014-01-21; resources none → 陈春勇; baseline start none → 2014-01-21; baseline finish none → 2014-01-21 |
| 129 | **管理运营资质** | 2013-11-01 → 2014-01-22 (+82d) | 2013-11-01 → 2014-01-23 (+83d) | 1d → 2d? | 0d → 18.9d | baseline start none → 2014-01-22; baseline finish none → 2014-01-23 |
| 130 | 维护证照种类 | 2013-11-01 → 2014-01-22 (+82d) | 2013-11-01 → 2014-01-22 (+82d) |  | 0d → 19.9d | constraint none → start no earlier than 2014-01-22; resources none → 陈春勇; baseline start none → 2014-01-22; baseline finish none → 2014-01-22 |
| 131 | 维护经营证照 | 2013-11-01 → 2014-01-23 (+83d) | 2013-11-01 → 2014-01-23 (+83d) |  | 0d → 18.9d | constraint none → start no earlier than 2014-01-23; resources none → 陈春勇; baseline start none → 2014-01-23; baseline finish none → 2014-01-23 |
| 132 | **维护基础配置** | 2013-11-01 → 2014-01-24 (+84d) | 2013-11-01 → 2014-01-28 (+88d) | 1d → 3d? | 0d → 15.9d | baseline start none → 2014-01-24; baseline finish none → 2014-01-28 |
| 133 | 维护分支机构 | 2013-11-01 → 2014-01-24 (+84d) | 2013-11-01 → 2014-01-24 (+84d) |  | 0d → 17.9d | constraint none → start no earlier than 2014-01-24; resources none → 陈春勇; baseline start none → 2014-01-24; baseline finish none → 2014-01-24 |
| 134 | 系统配置 | 2013-11-01 → 2014-01-27 (+87d) | 2013-11-01 → 2014-01-27 (+87d) |  | 0d → 16.9d | was named 配置颜色; constraint none → start no earlier than 2014-01-27; resources none → 陈春勇; baseline start none → 2014-01-27; baseline finish none → 2014-01-27 |
| 135 | 管理提醒策略 | 2013-11-01 → 2014-01-28 (+88d) | 2013-11-01 → 2014-01-28 (+88d) |  | 0d → 15.9d | constraint none → start no earlier than 2014-01-28; resources none → 陈春勇; baseline start none → 2014-01-28; baseline finish none → 2014-01-28 |
| 136 | **文档库模块** | 2013-11-01 → 2014-01-27 (+87d) | 2013-11-01 → 2014-01-29 (+89d) | 1d → 3d? | 0d → 14.9d | baseline start none → 2014-01-27; baseline finish none → 2014-01-29 |
| 137 | 维护文档类型 | 2013-11-01 → 2014-01-27 (+87d) | 2013-11-01 → 2014-01-27 (+87d) |  | 0d → 16.9d | constraint none → start no earlier than 2014-01-27; resources none → 林晓伟; baseline start none → 2014-01-27; baseline finish none → 2014-01-27 |
| 138 | 搜索文档 | 2013-11-01 → 2014-01-28 (+88d) | 2013-11-01 → 2014-01-29 (+89d) | 1d? → 2d? | 0d → 14.9d | constraint none → finish no earlier than 2014-01-29; resources none → 林晓伟; baseline start none → 2014-01-28; baseline finish none → 2014-01-29 |
| 139 | **发动机管理模块** |  |  | 1d → 1d? | 0d → 77.9d | baseline start none → 2013-11-01; baseline finish none → 2013-11-01 |
| 140 | 管理发动机滑油 |  |  |  | 0d → 77.9d | baseline start none → 2013-11-01; baseline finish none → 2013-11-01 |
| 141 | 管理APU滑油 |  |  |  | 0d → 77.9d | baseline start none → 2013-11-01; baseline finish none → 2013-11-01 |
| 142 | **附件管理模块** |  |  | 1d → 1d? | 0d → 77.9d | baseline start none → 2013-11-01; baseline finish none → 2013-11-01 |
| 143 | **管理SCN** |  |  | 1d → 1d? | 0d → 77.9d | baseline start none → 2013-11-01; baseline finish none → 2013-11-01 |
| 144 | 维护SCN |  |  |  | 0d → 77.9d | baseline start none → 2013-11-01; baseline finish none → 2013-11-01 |

## Version 8 (saved 2014-02-17)

Note of the change: Merge branch 'master' of https://github.com/UniCloud/FRP

Last finish stays 2014-02-19. Complete tasks 59 → 70.

Added:

| ID | Task | Duration | Start | Finish |
| --- | --- | --- | --- | --- |
| 140 | 管理基础配置 | 1d? | 2013-11-01 | 2013-11-01 |
| 141 | 维护件序号 | 1d? | 2013-11-01 | 2013-11-01 |
| 142 | 管理技术解决方案 | 1d? | 2013-11-01 | 2013-11-01 |
| 143 | **管理发动机构型** | 1d | 2013-11-01 | 2013-11-01 |
| 144 | 管理基本构型组 | 1d? | 2013-11-01 | 2013-11-01 |
| 145 | 管理特定选型 | 1d? | 2013-11-01 | 2013-11-01 |
| 146 | 比较构型差异 | 1d? | 2013-11-01 | 2013-11-01 |
| 147 | **滑油监控** | 1d | 2013-11-01 | 2013-11-01 |
| 150 | 修正飞机利用率 | 1d? | 2013-11-01 | 2013-11-01 |
| 151 | 维护拆换记录 | 1d? | 2013-11-01 | 2013-11-01 |
| 152 | 查询在位信息 | 1d? | 2013-11-01 | 2013-11-01 |
| 153 | 查询拆装历史 | 1d? | 2013-11-01 | 2013-11-01 |
| 154 | **控制维修** | 1d | 2013-11-01 | 2013-11-01 |
| 155 | 查看控制方案 | 1d? | 2013-11-01 | 2013-11-01 |
| 156 | 查询到寿日期 | 1d? | 2013-11-01 | 2013-11-01 |
| 160 | 对比SCN | 1d? | 2013-11-01 | 2013-11-01 |
| 161 | 查询AD/SB | 1d? | 2013-11-01 | 2013-11-01 |
| 162 | 维护结构损伤 | 1d? | 2013-11-01 | 2013-11-01 |

Changed:

| ID | Task | Start | Finish | Duration | Complete | Total float | Other |
| --- | --- | --- | --- | --- | --- | --- | --- |
| 14 | **采购管理模块** |  | 2014-01-21 → 2014-01-30 (+9d) | 47d? → 53.5d? |  | -33d → -39.5d |  |
| 16 | 维护供应商类别 |  | 2013-11-19 → 2013-11-20 (+1d) |  |  | 12d → 0d |  |
| 26 | **管理维修合同** |  | 2014-01-14 → 2014-01-17 (+3d) | 42d? → 44.25d? |  | -31d → -36.5d |  |
| 30 | 管理机身维修合同 | 2014-01-14 → 2014-01-16 (+2d) | 2014-01-14 → 2014-01-17 (+3d) |  |  | -31d → -36.5d |  |
| 37 | **查询分析** |  | 2014-01-21 → 2014-01-30 (+9d) | 36d? → 42.5d? |  | -33d → -39.5d |  |
| 39 | 分析飞机价格 | 2014-01-15 → 2014-01-17 (+2d) | 2014-01-17 → 2014-01-24 (+7d) |  |  | -31d → -35.25d |  |
| 40 | 分析发动机价格 | 2014-01-20 → 2013-11-06 (-75d) | 2014-01-21 → 2013-11-14 (-68d) |  |  | -33d → 0d |  |
| 61 | 设置飞机价格公式 | 2013-12-11 → 2013-11-04 (-37d) | 2013-12-12 → 2013-11-05 (-37d) |  |  | 6d → 0d |  |
| 62 | 设置发动机价格公式 | 2013-12-13 → 2013-11-04 (-39d) | 2013-12-16 → 2013-11-05 (-41d) |  |  | 4d → 0d |  |
| 63 | 计算飞机价格 | 2013-12-17 → 2013-11-08 (-39d) | 2013-12-18 → 2013-11-11 (-37d) |  |  | 2d → 0d |  |
| 72 | 维护任务模板 | 2013-12-26 → 2013-11-04 (-52d) | 2013-12-27 → 2013-11-05 (-52d) |  |  | -37d → 0d |  |
| 73 | 维护子项模板 | 2013-12-30 → 2013-11-08 (-52d) | 2013-12-31 → 2013-11-11 (-50d) |  |  | -39d → 0d |  |
| 74 | 维护项目模板 | 2014-01-01 → 2013-11-11 (-51d) | 2014-01-02 → 2013-11-12 (-51d) |  |  | -41d → 0d |  |
| 76 | 维护项目计划 | 2014-01-03 → 2013-11-12 (-52d) | 2014-01-06 → 2013-11-13 (-54d) |  |  | -43d → 0d |  |
| 77 | 发布项目计划 | 2014-01-07 → 2013-11-18 (-50d) | 2014-01-08 → 2013-11-19 (-50d) |  |  | -45d → 0d |  |
| 79 | 分派任务 | 2014-01-09 → 2013-11-18 (-52d) | 2014-01-10 → 2013-11-19 (-52d) |  |  | -47d → 0d |  |
| 80 | 查询项目执行 | 2014-01-13 → 2013-11-22 (-52d) | 2014-01-14 → 2013-11-25 (-50d) |  |  | -49d → 0d |  |
| 81 | **运力规划模块** |  | 2014-02-03 → 2014-02-11 (+8d) | 62.9d? → 69d? | 80% → 91% | 6d → 0d |  |
| 91 | **执行运力规划** |  | 2014-01-31 → 2014-01-15 (-16d) | 13.1d? → 2d? | 87% → 93% | 7.8d → 0d |  |
| 92 | 维护申请 |  | 2014-01-31 → 2014-01-14 A (-17d) |  | 90% → 100% | 7.8d → none |  |
| 93 | 维护批文 |  | 2014-01-15 A |  | 90% → 100% | 18.9d → none |  |
| 97 | **分析规划执行** |  | 2014-02-03 → 2014-02-11 A (+8d) | 58.9d? → 65d? | 44% → 100% | 6d → none |  |
| 99 | 分析规划执行 | 2014-02-10 A | 2014-02-10 A |  | 0% → 100% | 0d → none |  |
| 110 | **管理门户模块** | 2014-02-03 → 2014-02-12 (+9d) | 2014-02-06 → 2014-02-14 (+8d) |  |  | 0d → -24d |  |
| 111 | 领导门户 | 2014-02-03 → 2014-02-12 (+9d) | 2014-02-06 → 2014-02-14 (+8d) |  |  | 0d → -24d |  |
| 112 | 规划门户 | 2014-02-03 → 2014-02-12 (+9d) | 2014-02-06 → 2014-02-14 (+8d) |  |  | 0d → -24d |  |
| 113 | 机务门户 | 2014-02-03 → 2014-02-12 (+9d) | 2014-02-06 → 2014-02-14 (+8d) |  |  | 0d → -24d |  |
| 115 | **飞机构型模块** | 2014-02-06 → 2014-01-14 A (-23d) |  | 9d? → 26.75d? | 0% → 69% |  |  |
| 116 | 领域模型设计 | 2014-01-14 A |  |  | 0% → 75% |  |  |
| 117 | **管理飞机构型** | 2014-02-11 → 2014-01-22 A (-20d) | 2014-02-17 → 2014-02-18 (+1d) | 4d? → 19.75d? | 0% → 75% | 0d → 1d |  |
| 118 | 维护飞机系列 | 2014-01-22 A | 2014-01-23 A |  | 0% → 100% | 0d → none |  |
| 119 | 维护飞机型号 | 2014-01-28 A | 2014-01-28 A |  | 0% → 100% | 0d → none |  |
| 120 | 维护飞机配置 | 2014-01-30 → 2014-01-22 (-8d) | 2014-01-30 → 2014-01-23 (-7d) |  |  |  |  |
| 121 | **管理飞机数据** | 2014-02-17 → 2014-02-03 A (-14d) |  | 2d? → 12.75d? | 0% → 50% |  |  |
| 122 | 维护飞机证照 | 2014-02-03 A | 2014-02-03 A |  | 0% → 100% | 0d → none |  |
| 123 | 查询现役飞机 | 2014-02-05 → 2014-01-27 (-9d) | 2014-02-05 → 2014-01-27 (-9d) |  |  |  |  |
| 124 | **基础管理模块** | 2014-01-14 A | 2014-02-11 → 2014-01-28 (-14d) | 19.8d? → 11d? | 0% → 45% | 0d → 15.75d |  |
| 125 | 领域模型设计 | 2014-01-14 A | 2014-01-16 A |  | 0% → 100% | 0d → none |  |
| 129 | **管理运营资质** | 2014-01-22 A | 2014-01-23 A |  | 0% → 100% | 18.9d → none |  |
| 130 | 维护证照种类 | 2014-01-22 A | 2014-01-22 A |  | 0% → 100% | 19.9d → none | resources 陈春勇 → 林晓伟 |
| 131 | 维护经营证照 | 2014-01-23 A | 2014-01-23 A |  | 0% → 100% | 18.9d → none | resources 陈春勇 → 林晓伟 |
| 136 | **文档库模块** | 2014-01-27 A | 2014-01-29 A |  | 0% → 100% | 14.9d → none |  |
| 137 | 维护文档类型 | 2014-01-27 A | 2014-01-27 A |  | 0% → 100% | 16.9d → none |  |
| 138 | 搜索文档 | 2014-01-28 A | 2014-01-29 A |  | 0% → 100% | 14.9d → none |  |

## Version 9 (saved 2014-02-20)

Note of the change: Merge branch 'master' of https://github.com/UniCloud/FRP

Last finish 2014-02-19 → 2014-03-07 (+16d). Complete tasks 70 → 71.

Changed:

| ID | Task | Start | Finish | Duration | Complete | Total float | Predecessors | Other |
| --- | --- | --- | --- | --- | --- | --- | --- | --- |
| 15 | **管理合作公司** |  | 2013-11-27 A |  | 99% → 100% | 6d → none |  |  |
| 16 | 维护供应商类别 |  | 2013-11-20 → 2013-11-19 A (-1d) | 2d? → 1.9d? | 95% → 100% | 0d → none |  |  |
| 40 | 分析发动机价格 | 2013-11-06 → 2014-01-22 (+77d) | 2013-11-14 → 2014-01-30 (+77d) |  |  | 0d → -39.5d |  |  |
| 61 | 设置飞机价格公式 | 2013-11-04 → 2013-12-11 (+37d) | 2013-11-05 → 2013-12-12 (+37d) |  |  | 0d → 6d |  |  |
| 62 | 设置发动机价格公式 | 2013-11-04 → 2013-12-13 (+39d) | 2013-11-05 → 2013-12-16 (+41d) |  |  | 0d → 4d |  |  |
| 63 | 计算飞机价格 | 2013-11-08 → 2013-12-17 (+39d) | 2013-11-11 → 2013-12-18 (+37d) |  |  | 0d → 2d |  |  |
| 72 | 维护任务模板 | 2013-11-04 → 2013-12-26 (+52d) | 2013-11-05 → 2013-12-27 (+52d) |  |  | 0d → -37d |  |  |
| 73 | 维护子项模板 | 2013-11-08 → 2013-12-30 (+52d) | 2013-11-11 → 2013-12-31 (+50d) |  |  | 0d → -39d |  |  |
| 74 | 维护项目模板 | 2013-11-11 → 2014-01-01 (+51d) | 2013-11-12 → 2014-01-02 (+51d) |  |  | 0d → -41d |  |  |
| 76 | 维护项目计划 | 2013-11-12 → 2014-01-03 (+52d) | 2013-11-13 → 2014-01-06 (+54d) |  |  | 0d → -43d |  |  |
| 77 | 发布项目计划 | 2013-11-18 → 2014-01-07 (+50d) | 2013-11-19 → 2014-01-08 (+50d) |  |  | 0d → -45d |  |  |
| 79 | 分派任务 | 2013-11-18 → 2014-01-09 (+52d) | 2013-11-19 → 2014-01-10 (+52d) |  |  | 0d → -47d |  |  |
| 80 | 查询项目执行 | 2013-11-22 → 2014-01-13 (+52d) | 2013-11-25 → 2014-01-14 (+50d) |  |  | 0d → -49d |  |  |
| 114 | 财务门户 | 2014-01-29 → 2014-02-12 (+14d) | 2014-01-31 → 2014-02-14 (+14d) |  |  | 0d → -24d |  |  |
| 116 | 领域模型设计 |  | 2014-01-16 → 2014-02-17 (+32d) |  |  | 0d → 14.25d |  |  |
| 120 | 维护飞机配置 | 2014-01-22 → 2014-02-17 (+26d) | 2014-01-23 → 2014-02-18 (+26d) |  |  | 0d → 13.25d |  |  |
| 123 | 查询现役飞机 | 2014-01-27 → 2014-02-18 (+22d) | 2014-01-27 → 2014-02-19 (+23d) |  |  | 0d → 12.25d |  |  |
| 139 | **发动机管理模块** | 2013-11-01 → 2014-02-21 (+112d) | 2013-11-01 → 2014-03-07 (+126d) | 1d? → 11d? |  |  |  |  |
| 140 | 管理基础配置 | 2013-11-01 → 2014-03-03 (+122d) | 2013-11-01 → 2014-03-03 (+122d) |  |  | 0d → 4d |  | constraint none → start no earlier than 2014-02-21; resources none → 陈春勇 |
| 141 | 维护件序号 | 2013-11-01 → 2014-02-21 (+112d) | 2013-11-01 → 2014-02-24 (+115d) | 1d? → 2d |  | 0d → 2d |  | constraint none → start no earlier than 2014-02-21; resources none → 黄启彬 |
| 142 | 管理技术解决方案 | 2013-11-01 → 2014-02-25 (+116d) | 2013-11-01 → 2014-02-26 (+117d) | 1d? → 2d |  |  |  | constraint none → start no earlier than 2014-02-21; resources none → 黄启彬 |
| 143 | **管理发动机构型** | 2013-11-01 → 2014-02-27 (+118d) | 2013-11-01 → 2014-03-07 (+126d) | 1d → 7d |  |  | none → 141, 142 |  |
| 144 | 管理基本构型组 | 2013-11-01 → 2014-02-27 (+118d) | 2013-11-01 → 2014-03-03 (+122d) | 1d? → 3d |  |  |  | constraint none → start no earlier than 2014-02-21; resources none → 黄启彬 |
| 145 | 管理特定选型 | 2013-11-01 → 2014-03-04 (+123d) | 2013-11-01 → 2014-03-05 (+124d) | 1d? → 2d |  |  | none → 144 | constraint none → start no earlier than 2014-02-20; resources none → 黄启彬 |
| 146 | 比较构型差异 | 2013-11-01 → 2014-03-06 (+125d) | 2013-11-01 → 2014-03-07 (+126d) | 1d? → 2d |  |  | none → 144, 145 | constraint none → start no earlier than 2014-02-21; resources none → 黄启彬 |
| 147 | **滑油监控** | 2013-11-01 → 2014-02-21 (+112d) | 2013-11-01 → 2014-02-27 (+118d) | 1d → 5d |  | 0d → 6d |  |  |
| 148 | 管理发动机滑油 | 2013-11-01 → 2014-02-21 (+112d) | 2013-11-01 → 2014-02-25 (+116d) | 1d? → 3d |  | 0d → 8d |  | constraint none → start no earlier than 2014-02-21; resources none → 丁志浩 |
| 149 | 管理APU滑油 | 2013-11-01 → 2014-02-26 (+117d) | 2013-11-01 → 2014-02-27 (+118d) | 1d? → 2d |  | 0d → 6d |  | constraint none → start no earlier than 2014-02-21; resources none → 丁志浩 |
| 150 | 修正飞机利用率 | 2013-11-01 → 2014-02-27 (+118d) | 2013-11-01 → 2014-02-28 (+119d) | 1d? → 2d |  | 0d → 3d |  | constraint none → start no earlier than 2014-02-21; resources none → 林晓伟 |
| 151 | 维护拆换记录 | 2013-11-01 → 2014-02-21 (+112d) | 2013-11-01 → 2014-02-24 (+115d) | 1d? → 2d |  | 0d → 9d |  | constraint none → start no earlier than 2014-02-21; resources none → 陈春勇 |
| 152 | 查询在位信息 | 2013-11-01 → 2014-02-25 (+116d) | 2013-11-01 → 2014-02-26 (+117d) | 1d? → 2d |  | 0d → 7d |  | constraint none → start no earlier than 2014-02-21; resources none → 陈春勇 |
| 153 | 查询拆装历史 | 2013-11-01 → 2014-02-27 (+118d) | 2013-11-01 → 2014-02-28 (+119d) | 1d? → 2d |  | 0d → 5d |  | constraint none → start no earlier than 2014-02-21; resources none → 陈春勇 |
| 154 | **控制维修** | 2013-11-01 → 2014-03-03 (+122d) | 2013-11-01 → 2014-03-05 (+124d) | 1d → 3d? |  | 0d → 2d | none → 150 |  |
| 155 | 查看控制方案 | 2013-11-01 → 2014-03-05 (+124d) | 2013-11-01 → 2014-03-05 (+124d) |  |  | 0d → 2d |  | constraint none → start no earlier than 2014-02-21; resources none → 丁志浩 |
| 156 | 查询到寿日期 | 2013-11-01 → 2014-03-03 (+122d) | 2013-11-01 → 2014-03-04 (+123d) | 1d? → 2d |  | 0d → 3d |  | constraint none → start no earlier than 2014-02-21; resources none → 丁志浩 |
| 157 | **附件管理模块** | 2013-11-01 → 2014-02-21 (+112d) | 2013-11-01 → 2014-03-06 (+125d) | 1d? → 10d? |  | 0d → 1d |  |  |
| 158 | **管理SCN** | 2013-11-01 → 2014-02-21 (+112d) | 2013-11-01 → 2014-02-26 (+117d) | 1d? → 4d |  | 0d → 1d |  |  |
| 159 | 维护SCN | 2013-11-01 → 2014-02-21 (+112d) | 2013-11-01 → 2014-02-24 (+115d) | 1d? → 2d |  | 0d → 1d |  | constraint none → start no earlier than 2014-02-21; resources none → 林晓伟 |
| 160 | 对比SCN | 2013-11-01 → 2014-02-25 (+116d) | 2013-11-01 → 2014-02-26 (+117d) | 1d? → 2d |  | 0d → 1d | none → 159 | constraint none → start no earlier than 2014-02-20; resources none → 林晓伟 |
| 161 | 查询AD/SB | 2013-11-01 → 2014-03-03 (+122d) | 2013-11-01 → 2014-03-05 (+124d) | 1d? → 3d |  | 0d → 1d | none → 158 | constraint none → start no earlier than 2014-02-21; resources none → 林晓伟 |
| 162 | 维护结构损伤 | 2013-11-01 → 2014-03-06 (+125d) | 2013-11-01 → 2014-03-06 (+125d) |  |  | 0d → 1d | none → 161 | constraint none → start no earlier than 2014-02-20; resources none → 林晓伟 |

## Version 10 (saved 2014-02-28)

Note of the change: 更新项目进度。

Last finish stays 2014-03-07. Complete tasks 71 → 75.

Changed:

| ID | Task | Start | Finish | Complete | Total float |
| --- | --- | --- | --- | --- | --- |
| 141 | 维护件序号 | 2014-02-21 A |  | 0% → 75% | 2d → 0d |
| 142 | 管理技术解决方案 | 2014-02-25 A | 2014-02-26 A | 0% → 100% | 0d → none |
| 144 | 管理基本构型组 | 2014-02-27 A | 2014-03-03 A | 0% → 100% | 0d → none |
| 145 | 管理特定选型 | 2014-03-04 A | 2014-03-05 A | 0% → 100% | 0d → none |
| 146 | 比较构型差异 | 2014-03-06 A |  | 0% → 50% |  |
| 148 | 管理发动机滑油 | 2014-02-21 A | 2014-02-25 A | 0% → 100% | 8d → none |

## Version 11 (saved 2014-03-01)

Note of the change: Merge branch 'master' of https://github.com/UniCloud/FRP

Last finish stays 2014-03-07.

Changed:

| ID | Task | Start | Complete | Total float |
| --- | --- | --- | --- | --- |
| 159 | 维护SCN | 2014-02-21 A | 0% → 75% | 1d → 0d |
| 160 | 对比SCN | 2014-02-25 A | 0% → 75% | 1d → 0d |
| 161 | 查询AD/SB | 2014-03-03 A | 0% → 75% | 1d → 0d |
| 162 | 维护结构损伤 | 2014-03-06 A | 0% → 75% | 1d → 0d |
